| start | actual_duration_units | leveling_delay_units | work | remaining_work | cost | name | wbs | constraint_type | critical | priority | duration | duration_variance | remaining_duration | early_start | early_finish | late_start | late_finish | unique_id | summary | created | outline_number | type | effort_driven | fixed_cost_accrual | active | finish | id | outline_level | parent_task_unique_id | constraint_date | total_slack | successors | start_slack | finish_slack | predecessors | overallocated | free_slack |
| --- | --- | --- | --- | --- | --- | --- | --- | --- | --- | --- | --- | --- | --- | --- | --- | --- | --- | --- | --- | --- | --- | --- | --- | --- | --- | --- | --- | --- | --- | --- | --- | --- | --- | --- | --- | --- | --- |
| 2022-10-24T08:00:00.0 | h | h | 53740800 | 53740800 | 10904.1 | Fictional Project | 0 | AS_SOON_AS_POSSIBLE | True | 500 | 3542400 | 3542400 | 3542400 | 2022-10-24T08:00:00.0 | 2023-03-15T17:00:00.0 | 2022-10-24T08:00:00.0 | 2023-03-15T17:00:00.0 | 0 | True | 2018-08-29T14:07:00.0 | 0 | FIXED_DURATION | True | PRORATED | True | 2023-03-15T17:00:00.0 |  |  |  |  |  |  |  |  |  |  |  |
| 2022-10-24T08:00:00.0 | h | h | 53740800 | 53740800 | 10904.1 | Shutdown Project | 1 | AS_SOON_AS_POSSIBLE | True | 500 | 3542400 | 3542400 | 3542400 | 2022-10-24T08:00:00.0 | 2023-03-15T17:00:00.0 | 2022-10-24T08:00:00.0 | 2023-03-15T17:00:00.0 | 195 | True | 2022-01-20T09:54:48.0 | 1 | FIXED_DURATION | True | PRORATED | True | 2023-03-15T17:00:00.0 | 1 | 1 | 0 |  |  |  |  |  |  |  |  |
| 2022-10-24T08:00:00.0 | h | h | 921600 | 921600 | 76.8 | Equiment Spadework 1 | 1.1 | START_NO_EARLIER_THAN |  | 500 | 230400 | 230400 | 230400 | 2022-10-24T08:00:00.0 | 2022-11-01T17:00:00.0 | 2022-12-17T08:00:00.0 | 2022-12-26T17:00:00.0 | 2 |  | 2022-01-19T15:07:48.0 | 1.1 | FIXED_DURATION | True | PRORATED | True | 2022-11-01T17:00:00.0 | 2 | 2 | 195 | 2022-10-24T08:00:00.0 | 240 | 3 FS | 1353600 | 1353600 |  |  |  |
| 2022-11-02T08:00:00.0 | h | h | 1036800 | 1036800 | 144.0 | Prep top cover and elbow / Manhole cover removal | 1.2 | AS_SOON_AS_POSSIBLE |  | 500 | 259200 | 259200 | 259200 | 2022-11-02T08:00:00.0 | 2022-11-11T17:00:00.0 | 2022-12-27T08:00:00.0 | 2023-01-05T17:00:00.0 | 3 |  | 2022-01-19T15:07:48.0 | 1.2 | FIXED_DURATION | True | PRORATED | True | 2022-11-11T17:00:00.0 | 3 | 2 | 195 |  | 240 | 4 FS | 1353600 | 1353600 | 2 FS |  |  |
| 2022-11-12T08:00:00.0 | h | h |  |  |  | Lift Cover and elbow | 1.3 | AS_SOON_AS_POSSIBLE |  | 500 | 28800 | 28800 | 28800 | 2022-11-12T08:00:00.0 | 2022-11-12T17:00:00.0 | 2023-01-06T08:00:00.0 | 2023-01-06T17:00:00.0 | 4 |  | 2022-01-19T15:07:48.0 | 1.3 | FIXED_DURATION | True | PRORATED | True | 2022-11-12T17:00:00.0 | 4 | 2 | 195 |  | 240 | 5 FS | 1353600 | 1353600 | 3 FS |  |  |
| 2022-11-14T08:00:00.0 | h | h | 460800 | 460800 | 38.4 | Remove demister | 1.4 | AS_SOON_AS_POSSIBLE |  | 500 | 115200 | 115200 | 115200 | 2022-11-14T08:00:00.0 | 2022-11-17T17:00:00.0 | 2023-01-07T08:00:00.0 | 2023-01-11T17:00:00.0 | 5 |  | 2022-01-19T15:07:48.0 | 1.4 | FIXED_DURATION | True | PRORATED | True | 2022-11-17T17:00:00.0 | 5 | 2 | 195 |  | 240 | 6 FS | 1353600 | 1353600 | 4 FS |  |  |
| 2022-11-18T08:00:00.0 | h | h | 115200 | 115200 | 9.6 | Set up ventilation | 1.5 | AS_SOON_AS_POSSIBLE |  | 500 | 57600 | 57600 | 57600 | 2022-11-18T08:00:00.0 | 2022-11-19T17:00:00.0 | 2023-01-12T08:00:00.0 | 2023-01-13T17:00:00.0 | 6 |  | 2022-01-19T15:07:48.0 | 1.5 | FIXED_DURATION | True | PRORATED | True | 2022-11-19T17:00:00.0 | 6 | 2 | 195 |  | 240 | 7 FS | 1353600 | 1353600 | 5 FS |  |  |
| 2022-11-21T08:00:00.0 | h | h | 28800 | 28800 | 24.0 | Gas test for CS entry | 1.6 | AS_SOON_AS_POSSIBLE |  | 500 | 28800 | 28800 | 28800 | 2022-11-21T08:00:00.0 | 2022-11-21T17:00:00.0 | 2023-01-14T08:00:00.0 | 2023-01-14T17:00:00.0 | 7 |  | 2022-01-19T15:07:48.0 | 1.6 | FIXED_DURATION | True | PRORATED | True | 2022-11-21T17:00:00.0 | 7 | 2 | 195 |  | 240 | 8 FS | 1353600 | 1353600 | 6 FS |  |  |
| 2022-11-22T08:00:00.0 | h | h | 57600 | 57600 | 48.0 | Pre-cleaning inspection | 1.7 | AS_SOON_AS_POSSIBLE |  | 500 | 57600 | 57600 | 57600 | 2022-11-22T08:00:00.0 | 2022-11-23T17:00:00.0 | 2023-01-16T08:00:00.0 | 2023-01-17T17:00:00.0 | 8 |  | 2022-01-19T15:07:48.0 | 1.7 | FIXED_DURATION | True | PRORATED | True | 2022-11-23T17:00:00.0 | 8 | 2 | 195 |  | 240 | 9 FS, 12 FS | 1353600 | 1353600 | 7 FS |  |  |
| 2022-11-24T08:00:00.0 | h | h | 921600 | 921600 | 128.0 | Clean Internal | 1.8 | AS_SOON_AS_POSSIBLE |  | 500 | 460800 | 460800 | 460800 | 2022-11-24T08:00:00.0 | 2022-12-12T17:00:00.0 | 2023-01-18T08:00:00.0 | 2023-02-04T17:00:00.0 | 9 |  | 2022-01-19T15:07:48.0 | 1.8 | FIXED_DURATION | True | PRORATED | True | 2022-12-12T17:00:00.0 | 9 | 2 | 195 |  | 240 | 10 FS | 1353600 | 1353600 | 8 FS |  |  |
| 2022-12-13T08:00:00.0 | h | h | 28800 | 28800 | 24.0 | Post-cleaning inspection | 1.9 | AS_SOON_AS_POSSIBLE |  | 500 | 28800 | 28800 | 28800 | 2022-12-13T08:00:00.0 | 2022-12-13T17:00:00.0 | 2023-02-06T08:00:00.0 | 2023-02-06T17:00:00.0 | 10 |  | 2022-01-19T15:07:48.0 | 1.9 | FIXED_DURATION | True | PRORATED | True | 2022-12-13T17:00:00.0 | 10 | 2 | 195 |  | 240 | 11 FS | 1353600 | 1353600 | 9 FS |  |  |
| 2022-12-14T08:00:00.0 | h | h | 460800 | 460800 | 38.4 | Replace demister with new | 1.10 | AS_SOON_AS_POSSIBLE |  | 500 | 115200 | 115200 | 115200 | 2022-12-14T08:00:00.0 | 2022-12-17T17:00:00.0 | 2023-02-07T08:00:00.0 | 2023-02-10T17:00:00.0 | 11 |  | 2022-01-19T15:07:48.0 | 1.10 | FIXED_DURATION | True | PRORATED | True | 2022-12-17T17:00:00.0 | 11 | 2 | 195 |  | 240 | 14 FS | 1353600 | 1353600 | 10 FS | True |  |
| 2022-11-24T08:00:00.0 | h | h | 460800 | 460800 | 38.4 | Powerbrush for UTG @ CML (HW) | 1.11 | AS_SOON_AS_POSSIBLE |  | 500 | 230400 | 230400 | 230400 | 2022-11-24T08:00:00.0 | 2022-12-02T17:00:00.0 | 2023-02-25T08:00:00.0 | 2023-03-06T17:00:00.0 | 12 |  | 2022-01-19T15:07:48.0 | 1.11 | FIXED_DURATION | True | PRORATED | True | 2022-12-02T17:00:00.0 | 12 | 2 | 195 |  | 480 | 13 FS | 2304000 | 2304000 | 8 FS |  |  |
| 2022-12-03T08:00:00.0 | h | h | 230400 | 230400 | 192.0 | UTG @ CML | 1.12 | AS_SOON_AS_POSSIBLE |  | 500 | 230400 | 230400 | 230400 | 2022-12-03T08:00:00.0 | 2022-12-12T17:00:00.0 | 2023-03-07T08:00:00.0 | 2023-03-15T17:00:00.0 | 13 |  | 2022-01-19T15:07:48.0 | 1.12 | FIXED_DURATION | True | PRORATED | True | 2022-12-12T17:00:00.0 | 13 | 2 | 195 |  | 480 |  | 2304000 | 2304000 | 12 FS |  | 480 |
| 2022-12-19T08:00:00.0 | h | h | 57600 | 57600 | 32.0 | Lift top cover and elbow / manhole cover for reinstatement (Using Crane) | 1.13 | AS_SOON_AS_POSSIBLE |  | 500 | 57600 | 57600 | 57600 | 2022-12-19T08:00:00.0 | 2022-12-20T17:00:00.0 | 2023-02-11T08:00:00.0 | 2023-02-13T17:00:00.0 | 14 |  | 2022-01-19T15:07:48.0 | 1.13 | FIXED_DURATION | True | PRORATED | True | 2022-12-20T17:00:00.0 | 14 | 2 | 195 |  | 240 | 15 FS | 1353600 | 1353600 | 11 FS |  |  |
| 2022-12-21T08:00:00.0 | h | h | 1612800 | 1612800 | 224.0 | Reinstate top cover and elbow / manhole cover / TFA | 1.14 | AS_SOON_AS_POSSIBLE |  | 500 | 403200 | 403200 | 403200 | 2022-12-21T08:00:00.0 | 2023-01-05T17:00:00.0 | 2023-02-14T08:00:00.0 | 2023-03-01T17:00:00.0 | 15 |  | 2022-01-19T15:07:48.0 | 1.14 | FIXED_DURATION | True | PRORATED | True | 2023-01-05T17:00:00.0 | 15 | 2 | 195 |  | 240 | 16 FS | 1353600 | 1353600 | 14 FS |  |  |
| 2023-01-06T08:00:00.0 | h | h | 1382400 | 1382400 | 192.0 | Despade / TFA | 1.15 | AS_SOON_AS_POSSIBLE |  | 500 | 345600 | 345600 | 345600 | 2023-01-06T08:00:00.0 | 2023-01-19T17:00:00.0 | 2023-03-02T08:00:00.0 | 2023-03-15T17:00:00.0 | 16 |  | 2022-01-19T15:07:48.0 | 1.15 | FIXED_DURATION | True | PRORATED | True | 2023-01-19T17:00:00.0 | 16 | 2 | 195 |  | 240 |  | 1353600 | 1353600 | 15 FS |  | 240 |
| 2022-10-24T08:00:00.0 | h | h | 345600 | 345600 | 48.0 | Remove NRV | 1.16 | START_NO_EARLIER_THAN |  | 500 | 86400 | 86400 | 86400 | 2022-10-24T08:00:00.0 | 2022-10-26T17:00:00.0 | 2023-01-31T08:00:00.0 | 2023-02-02T17:00:00.0 | 17 |  | 2022-01-19T15:07:48.0 | 1.16 | FIXED_DURATION | True | PRORATED | True | 2022-10-26T17:00:00.0 | 17 | 2 | 195 | 2022-10-24T08:00:00.0 | 480 | 18 FS | 2448000 | 2448000 |  |  |  |
| 2022-10-27T08:00:00.0 | h | h | 864000 | 864000 | 360.0 | Overhaul/ Testing | 1.17 | AS_SOON_AS_POSSIBLE |  | 500 | 864000 | 864000 | 864000 | 2022-10-27T08:00:00.0 | 2022-11-30T17:00:00.0 | 2023-02-03T08:00:00.0 | 2023-03-09T17:00:00.0 | 18 |  | 2022-01-19T15:07:48.0 | 1.17 | FIXED_DURATION | True | PRORATED | True | 2022-11-30T17:00:00.0 | 18 | 2 | 195 |  | 480 | 19 FS | 2448000 | 2448000 | 17 FS |  |  |
| 2022-12-01T08:00:00.0 | h | h | 57600 | 57600 | 48.0 | Inspection | 1.18 | AS_SOON_AS_POSSIBLE |  | 500 | 57600 | 57600 | 57600 | 2022-12-01T08:00:00.0 | 2022-12-02T17:00:00.0 | 2023-03-10T08:00:00.0 | 2023-03-11T17:00:00.0 | 19 |  | 2022-01-19T15:07:48.0 | 1.18 | FIXED_DURATION | True | PRORATED | True | 2022-12-02T17:00:00.0 | 19 | 2 | 195 |  | 480 | 20 FS | 2448000 | 2448000 | 18 FS |  |  |
| 2022-12-03T08:00:00.0 | h | h | 345600 | 345600 | 48.0 | Reinstall NRV | 1.19 | AS_SOON_AS_POSSIBLE |  | 500 | 86400 | 86400 | 86400 | 2022-12-03T08:00:00.0 | 2022-12-06T17:00:00.0 | 2023-03-13T08:00:00.0 | 2023-03-15T17:00:00.0 | 20 |  | 2022-01-19T15:07:48.0 | 1.19 | FIXED_DURATION | True | PRORATED | True | 2022-12-06T17:00:00.0 | 20 | 2 | 195 |  | 480 |  | 2448000 | 2448000 | 19 FS |  | 480 |
| 2022-10-24T08:00:00.0 | h | h | 1036800 | 1036800 | 86.4 | LOTO in, fuse out & cable out | 1.20 | START_NO_EARLIER_THAN | True | 500 | 259200 | 259200 | 259200 | 2022-10-24T08:00:00.0 | 2022-11-02T17:00:00.0 | 2022-10-24T08:00:00.0 | 2022-11-02T17:00:00.0 | 21 |  | 2022-01-19T15:07:48.0 | 1.20 | FIXED_DURATION | True | PRORATED | True | 2022-11-02T17:00:00.0 | 21 | 2 | 195 | 2022-10-24T08:00:00.0 |  | 23 FS |  |  |  |  |  |
| 2022-12-15T08:00:00.0 | h | h | 576000 | 576000 | 48.0 | Send to workshop | 1.21 | AS_SOON_AS_POSSIBLE | True | 500 | 144000 | 144000 | 144000 | 2022-12-15T08:00:00.0 | 2022-12-20T17:00:00.0 | 2022-12-15T08:00:00.0 | 2022-12-20T17:00:00.0 | 22 |  | 2022-01-19T15:07:48.0 | 1.21 | FIXED_DURATION | True | PRORATED | True | 2022-12-20T17:00:00.0 | 22 | 2 | 195 |  |  | 26 FS |  |  | 24 FS | True |  |
| 2022-11-03T08:00:00.0 | h | h | 1036800 | 1036800 | 144.0 | Spade in | 1.22 | AS_SOON_AS_POSSIBLE | True | 500 | 259200 | 259200 | 259200 | 2022-11-03T08:00:00.0 | 2022-11-12T17:00:00.0 | 2022-11-03T08:00:00.0 | 2022-11-12T17:00:00.0 | 23 |  | 2022-01-19T15:07:48.0 | 1.22 | FIXED_DURATION | True | PRORATED | True | 2022-11-12T17:00:00.0 | 23 | 2 | 195 |  |  | 25 FS |  |  | 21 FS |  |  |
| 2022-11-24T08:00:00.0 | h | h | 2073600 | 2073600 | 172.8 | Remove pump | 1.23 | AS_SOON_AS_POSSIBLE | True | 500 | 518400 | 518400 | 518400 | 2022-11-24T08:00:00.0 | 2022-12-14T17:00:00.0 | 2022-11-24T08:00:00.0 | 2022-12-14T17:00:00.0 | 24 |  | 2022-01-19T15:07:48.0 | 1.23 | FIXED_DURATION | True | PRORATED | True | 2022-12-14T17:00:00.0 | 24 | 2 | 195 |  |  | 22 FS |  |  | 25 FS | True |  |
| 2022-11-14T08:00:00.0 | h | h | 1036800 | 1036800 | 86.4 | Decouple with motor | 1.24 | AS_SOON_AS_POSSIBLE | True | 500 | 259200 | 259200 | 259200 | 2022-11-14T08:00:00.0 | 2022-11-23T17:00:00.0 | 2022-11-14T08:00:00.0 | 2022-11-23T17:00:00.0 | 25 |  | 2022-01-19T15:07:48.0 | 1.24 | FIXED_DURATION | True | PRORATED | True | 2022-11-23T17:00:00.0 | 25 | 2 | 195 |  |  | 24 FS |  |  | 23 FS |  |  |
| 2022-12-21T08:00:00.0 | h | h | 921600 | 921600 | 384.0 | Overhaul at workshop | 1.25 | AS_SOON_AS_POSSIBLE | True | 500 | 921600 | 921600 | 921600 | 2022-12-21T08:00:00.0 | 2023-01-26T17:00:00.0 | 2022-12-21T08:00:00.0 | 2023-01-26T17:00:00.0 | 26 |  | 2022-01-19T15:07:48.0 | 1.25 | FIXED_DURATION | True | PRORATED | True | 2023-01-26T17:00:00.0 | 26 | 2 | 195 |  |  | 27 FS |  |  | 22 FS |  |  |
| 2023-01-27T08:00:00.0 | h | h | 576000 | 576000 | 48.0 | Send back to site | 1.26 | AS_SOON_AS_POSSIBLE | True | 500 | 144000 | 144000 | 144000 | 2023-01-27T08:00:00.0 | 2023-02-01T17:00:00.0 | 2023-01-27T08:00:00.0 | 2023-02-01T17:00:00.0 | 27 |  | 2022-01-19T15:07:48.0 | 1.26 | FIXED_DURATION | True | PRORATED | True | 2023-02-01T17:00:00.0 | 27 | 2 | 195 |  |  | 28 FS, 29 FS |  |  | 26 FS |  |  |
| 2023-02-02T08:00:00.0 | h | h | 1036800 | 1036800 | 86.4 | Install pump | 1.27 | AS_SOON_AS_POSSIBLE | True | 500 | 259200 | 259200 | 259200 | 2023-02-02T08:00:00.0 | 2023-02-11T17:00:00.0 | 2023-02-02T08:00:00.0 | 2023-02-11T17:00:00.0 | 28 |  | 2022-01-19T15:07:48.0 | 1.27 | FIXED_DURATION | True | PRORATED | True | 2023-02-11T17:00:00.0 | 28 | 2 | 195 |  |  | 30 FS |  |  | 27 FS |  |  |
| 2023-02-02T08:00:00.0 | h | h | 3110400 | 3110400 | 259.2 | Alignment | 1.28 | AS_SOON_AS_POSSIBLE |  | 500 | 777600 | 777600 | 777600 | 2023-02-02T08:00:00.0 | 2023-03-04T17:00:00.0 | 2023-02-13T08:00:00.0 | 2023-03-15T17:00:00.0 | 29 |  | 2022-01-19T15:07:48.0 | 1.28 | FIXED_DURATION | True | PRORATED | True | 2023-03-04T17:00:00.0 | 29 | 2 | 195 |  |  |  | 259200 | 259200 | 27 FS |  |  |
| 2023-02-13T08:00:00.0 | h | h | 1036800 | 1036800 | 86.4 | Couple back with motor | 1.29 | AS_SOON_AS_POSSIBLE | True | 500 | 259200 | 259200 | 259200 | 2023-02-13T08:00:00.0 | 2023-02-22T17:00:00.0 | 2023-02-13T08:00:00.0 | 2023-02-22T17:00:00.0 | 30 |  | 2022-01-19T15:07:48.0 | 1.29 | FIXED_DURATION | True | PRORATED | True | 2023-02-22T17:00:00.0 | 30 | 2 | 195 |  |  | 31 FS |  |  | 28 FS |  |  |
| 2023-02-23T08:00:00.0 | h | h | 1036800 | 1036800 | 144.0 | Spade out | 1.30 | AS_SOON_AS_POSSIBLE | True | 500 | 259200 | 259200 | 259200 | 2023-02-23T08:00:00.0 | 2023-03-04T17:00:00.0 | 2023-02-23T08:00:00.0 | 2023-03-04T17:00:00.0 | 31 |  | 2022-01-19T15:07:48.0 | 1.30 | FIXED_DURATION | True | PRORATED | True | 2023-03-04T17:00:00.0 | 31 | 2 | 195 |  |  | 32 FS |  |  | 30 FS |  |  |
| 2023-03-06T08:00:00.0 | h | h | 1036800 | 1036800 | 86.4 | Fuse in, LOTO out | 1.31 | AS_SOON_AS_POSSIBLE | True | 500 | 259200 | 259200 | 259200 | 2023-03-06T08:00:00.0 | 2023-03-15T17:00:00.0 | 2023-03-06T08:00:00.0 | 2023-03-15T17:00:00.0 | 32 |  | 2022-01-19T15:07:48.0 | 1.31 | FIXED_DURATION | True | PRORATED | True | 2023-03-15T17:00:00.0 | 32 | 2 | 195 |  |  |  |  |  | 31 FS |  |  |
| 2022-10-24T08:00:00.0 | h | h | 921600 | 921600 | 128.0 | Equiment Spadework 2 | 1.32 | START_NO_EARLIER_THAN |  | 500 | 230400 | 230400 | 230400 | 2022-10-24T08:00:00.0 | 2022-11-01T17:00:00.0 | 2022-11-29T08:00:00.0 | 2022-12-07T17:00:00.0 | 33 |  | 2022-01-19T15:07:48.0 | 1.32 | FIXED_DURATION | True | PRORATED | True | 2022-11-01T17:00:00.0 | 33 | 2 | 195 | 2022-10-24T08:00:00.0 | 180 | 34 FS | 892800 | 892800 |  |  |  |
| 2022-11-02T08:00:00.0 | h | h | 1036800 | 1036800 | 144.0 | Prep top cover and elbow / Manhole cover removal | 1.33 | AS_SOON_AS_POSSIBLE |  | 500 | 259200 | 259200 | 259200 | 2022-11-02T08:00:00.0 | 2022-11-11T17:00:00.0 | 2022-12-08T08:00:00.0 | 2022-12-17T17:00:00.0 | 34 |  | 2022-01-19T15:07:48.0 | 1.33 | FIXED_DURATION | True | PRORATED | True | 2022-11-11T17:00:00.0 | 34 | 2 | 195 |  | 180 | 35 FS | 892800 | 892800 | 33 FS |  |  |
| 2022-11-12T08:00:00.0 | h | h |  |  |  | Lift top cover and elbow / Manhole cover (Using Crane) | 1.34 | AS_SOON_AS_POSSIBLE |  | 500 | 28800 | 28800 | 28800 | 2022-11-12T08:00:00.0 | 2022-11-12T17:00:00.0 | 2022-12-19T08:00:00.0 | 2022-12-19T17:00:00.0 | 35 |  | 2022-01-19T15:07:48.0 | 1.34 | FIXED_DURATION | True | PRORATED | True | 2022-11-12T17:00:00.0 | 35 | 2 | 195 |  | 180 | 36 FS | 892800 | 892800 | 34 FS |  |  |
| 2022-11-14T08:00:00.0 | h | h | 460800 | 460800 | 38.4 | Remove demister | 1.35 | AS_SOON_AS_POSSIBLE |  | 500 | 115200 | 115200 | 115200 | 2022-11-14T08:00:00.0 | 2022-11-17T17:00:00.0 | 2022-12-20T08:00:00.0 | 2022-12-23T17:00:00.0 | 36 |  | 2022-01-19T15:07:48.0 | 1.35 | FIXED_DURATION | True | PRORATED | True | 2022-11-17T17:00:00.0 | 36 | 2 | 195 |  | 180 | 37 FS | 892800 | 892800 | 35 FS |  |  |
| 2022-11-18T08:00:00.0 | h | h | 115200 | 115200 | 9.6 | Set up ventilation | 1.36 | AS_SOON_AS_POSSIBLE |  | 500 | 57600 | 57600 | 57600 | 2022-11-18T08:00:00.0 | 2022-11-19T17:00:00.0 | 2022-12-24T08:00:00.0 | 2022-12-26T17:00:00.0 | 37 |  | 2022-01-19T15:07:48.0 | 1.36 | FIXED_DURATION | True | PRORATED | True | 2022-11-19T17:00:00.0 | 37 | 2 | 195 |  | 180 | 38 FS | 892800 | 892800 | 36 FS |  |  |
| 2022-11-21T08:00:00.0 | h | h | 28800 | 28800 | 24.0 | Gas test for CS entry | 1.37 | AS_SOON_AS_POSSIBLE |  | 500 | 28800 | 28800 | 28800 | 2022-11-21T08:00:00.0 | 2022-11-21T17:00:00.0 | 2022-12-27T08:00:00.0 | 2022-12-27T17:00:00.0 | 38 |  | 2022-01-19T15:07:48.0 | 1.37 | FIXED_DURATION | True | PRORATED | True | 2022-11-21T17:00:00.0 | 38 | 2 | 195 |  | 180 | 39 FS | 892800 | 892800 | 37 FS |  |  |
| 2022-11-22T08:00:00.0 | h | h | 57600 | 57600 | 48.0 | Pre-cleaning inspection | 1.38 | AS_SOON_AS_POSSIBLE |  | 500 | 57600 | 57600 | 57600 | 2022-11-22T08:00:00.0 | 2022-11-23T17:00:00.0 | 2022-12-28T08:00:00.0 | 2022-12-29T17:00:00.0 | 39 |  | 2022-01-19T15:07:48.0 | 1.38 | FIXED_DURATION | True | PRORATED | True | 2022-11-23T17:00:00.0 | 39 | 2 | 195 |  | 180 | 40 FS | 892800 | 892800 | 38 FS |  |  |
| 2022-11-24T08:00:00.0 | h | h | 921600 | 921600 | 76.8 | Clean Internal | 1.39 | AS_SOON_AS_POSSIBLE |  | 500 | 460800 | 460800 | 460800 | 2022-11-24T08:00:00.0 | 2022-12-12T17:00:00.0 | 2022-12-30T08:00:00.0 | 2023-01-17T17:00:00.0 | 40 |  | 2022-01-19T15:07:48.0 | 1.39 | FIXED_DURATION | True | PRORATED | True | 2022-12-12T17:00:00.0 | 40 | 2 | 195 |  | 180 | 41 FS | 892800 | 892800 | 39 FS |  |  |
| 2022-12-13T08:00:00.0 | h | h | 28800 | 28800 | 24.0 | Post-cleaning inspection | 1.40 | AS_SOON_AS_POSSIBLE |  | 500 | 28800 | 28800 | 28800 | 2022-12-13T08:00:00.0 | 2022-12-13T17:00:00.0 | 2023-01-18T08:00:00.0 | 2023-01-18T17:00:00.0 | 41 |  | 2022-01-19T15:07:48.0 | 1.40 | FIXED_DURATION | True | PRORATED | True | 2022-12-13T17:00:00.0 | 41 | 2 | 195 |  | 180 | 42 FS | 892800 | 892800 | 40 FS |  |  |
| 2022-12-14T08:00:00.0 | h | h | 460800 | 460800 | 38.4 | Replace demister with new | 1.41 | AS_SOON_AS_POSSIBLE |  | 500 | 115200 | 115200 | 115200 | 2022-12-14T08:00:00.0 | 2022-12-17T17:00:00.0 | 2023-01-19T08:00:00.0 | 2023-01-23T17:00:00.0 | 42 |  | 2022-01-19T15:07:48.0 | 1.41 | FIXED_DURATION | True | PRORATED | True | 2022-12-17T17:00:00.0 | 42 | 2 | 195 |  | 180 | 43 FS | 892800 | 892800 | 41 FS | True |  |
| 2022-12-19T08:00:00.0 | h | h | 460800 | 460800 | 38.4 | Powerbrush for UTG @ CML (HW) | 1.42 | AS_SOON_AS_POSSIBLE |  | 500 | 230400 | 230400 | 230400 | 2022-12-19T08:00:00.0 | 2022-12-27T17:00:00.0 | 2023-01-24T08:00:00.0 | 2023-02-01T17:00:00.0 | 43 |  | 2022-01-19T15:07:48.0 | 1.42 | FIXED_DURATION | True | PRORATED | True | 2022-12-27T17:00:00.0 | 43 | 2 | 195 |  | 180 | 44 FS | 892800 | 892800 | 42 FS |  |  |
| 2022-12-28T08:00:00.0 | h | h | 230400 | 230400 | 192.0 | UTG @ CML | 1.43 | AS_SOON_AS_POSSIBLE |  | 500 | 230400 | 230400 | 230400 | 2022-12-28T08:00:00.0 | 2023-01-05T17:00:00.0 | 2023-02-02T08:00:00.0 | 2023-02-10T17:00:00.0 | 44 |  | 2022-01-19T15:07:48.0 | 1.43 | FIXED_DURATION | True | PRORATED | True | 2023-01-05T17:00:00.0 | 44 | 2 | 195 |  | 180 | 45 FS | 892800 | 892800 | 43 FS |  |  |
| 2023-01-06T08:00:00.0 | h | h | 57600 | 57600 | 32.0 | Lift top cover and elbow / manhole cover for reinstatement (Using Crane) | 1.44 | AS_SOON_AS_POSSIBLE |  | 500 | 57600 | 57600 | 57600 | 2023-01-06T08:00:00.0 | 2023-01-07T17:00:00.0 | 2023-02-11T08:00:00.0 | 2023-02-13T17:00:00.0 | 45 |  | 2022-01-19T15:07:48.0 | 1.44 | FIXED_DURATION | True | PRORATED | True | 2023-01-07T17:00:00.0 | 45 | 2 | 195 |  | 180 | 46 FS | 892800 | 892800 | 44 FS |  |  |
| 2023-01-09T08:00:00.0 | h | h | 1612800 | 1612800 | 224.0 | Reinstate top cover and elbow / manhole cover / TFA | 1.45 | AS_SOON_AS_POSSIBLE |  | 500 | 403200 | 403200 | 403200 | 2023-01-09T08:00:00.0 | 2023-01-24T17:00:00.0 | 2023-02-14T08:00:00.0 | 2023-03-01T17:00:00.0 | 46 |  | 2022-01-19T15:07:48.0 | 1.45 | FIXED_DURATION | True | PRORATED | True | 2023-01-24T17:00:00.0 | 46 | 2 | 195 |  | 180 | 47 FS | 892800 | 892800 | 45 FS |  |  |
| 2023-01-25T08:00:00.0 | h | h | 1382400 | 1382400 | 192.0 | Despade / TFA | 1.46 | AS_SOON_AS_POSSIBLE |  | 500 | 345600 | 345600 | 345600 | 2023-01-25T08:00:00.0 | 2023-02-07T17:00:00.0 | 2023-03-02T08:00:00.0 | 2023-03-15T17:00:00.0 | 47 |  | 2022-01-19T15:07:48.0 | 1.46 | FIXED_DURATION | True | PRORATED | True | 2023-02-07T17:00:00.0 | 47 | 2 | 195 |  | 180 |  | 892800 | 892800 | 46 FS |  | 180 |
| 2022-10-24T08:00:00.0 | h | h | 921600 | 921600 | 128.0 | Equiment Spadework 3 | 1.47 | START_NO_EARLIER_THAN |  | 500 | 230400 | 230400 | 230400 | 2022-10-24T08:00:00.0 | 2022-11-01T17:00:00.0 | 2022-11-29T08:00:00.0 | 2022-12-07T17:00:00.0 | 48 |  | 2022-01-19T15:07:48.0 | 1.47 | FIXED_DURATION | True | PRORATED | True | 2022-11-01T17:00:00.0 | 48 | 2 | 195 | 2022-10-24T08:00:00.0 | 180 | 49 FS | 892800 | 892800 |  |  |  |
| 2022-11-02T08:00:00.0 | h | h | 1036800 | 1036800 | 144.0 | Prep top cover and elbow / Manhole cover removal | 1.48 | AS_SOON_AS_POSSIBLE |  | 500 | 259200 | 259200 | 259200 | 2022-11-02T08:00:00.0 | 2022-11-11T17:00:00.0 | 2022-12-08T08:00:00.0 | 2022-12-17T17:00:00.0 | 49 |  | 2022-01-19T15:07:48.0 | 1.48 | FIXED_DURATION | True | PRORATED | True | 2022-11-11T17:00:00.0 | 49 | 2 | 195 |  | 180 | 50 FS | 892800 | 892800 | 48 FS |  |  |
| 2022-11-12T08:00:00.0 | h | h | 28800 | 28800 | 16.0 | Lift top cover and elbow / Manhole cover (Using Crane) | 1.49 | AS_SOON_AS_POSSIBLE |  | 500 | 28800 | 28800 | 28800 | 2022-11-12T08:00:00.0 | 2022-11-12T17:00:00.0 | 2022-12-19T08:00:00.0 | 2022-12-19T17:00:00.0 | 50 |  | 2022-01-19T15:07:48.0 | 1.49 | FIXED_DURATION | True | PRORATED | True | 2022-11-12T17:00:00.0 | 50 | 2 | 195 |  | 180 | 51 FS | 892800 | 892800 | 49 FS |  |  |
| 2022-11-14T08:00:00.0 | h | h | 460800 | 460800 | 38.4 | Remove demister | 1.50 | AS_SOON_AS_POSSIBLE |  | 500 | 115200 | 115200 | 115200 | 2022-11-14T08:00:00.0 | 2022-11-17T17:00:00.0 | 2022-12-20T08:00:00.0 | 2022-12-23T17:00:00.0 | 51 |  | 2022-01-19T15:07:48.0 | 1.50 | FIXED_DURATION | True | PRORATED | True | 2022-11-17T17:00:00.0 | 51 | 2 | 195 |  | 180 | 52 FS | 892800 | 892800 | 50 FS |  |  |
| 2022-11-18T08:00:00.0 | h | h | 115200 | 115200 | 9.6 | Set up ventilation | 1.51 | AS_SOON_AS_POSSIBLE |  | 500 | 57600 | 57600 | 57600 | 2022-11-18T08:00:00.0 | 2022-11-19T17:00:00.0 | 2022-12-24T08:00:00.0 | 2022-12-26T17:00:00.0 | 52 |  | 2022-01-19T15:07:48.0 | 1.51 | FIXED_DURATION | True | PRORATED | True | 2022-11-19T17:00:00.0 | 52 | 2 | 195 |  | 180 | 53 FS | 892800 | 892800 | 51 FS |  |  |
| 2022-11-21T08:00:00.0 | h | h | 28800 | 28800 | 24.0 | Gas test for CS entry | 1.52 | AS_SOON_AS_POSSIBLE |  | 500 | 28800 | 28800 | 28800 | 2022-11-21T08:00:00.0 | 2022-11-21T17:00:00.0 | 2022-12-27T08:00:00.0 | 2022-12-27T17:00:00.0 | 53 |  | 2022-01-19T15:07:48.0 | 1.52 | FIXED_DURATION | True | PRORATED | True | 2022-11-21T17:00:00.0 | 53 | 2 | 195 |  | 180 | 54 FS | 892800 | 892800 | 52 FS |  |  |
| 2022-11-22T08:00:00.0 | h | h | 57600 | 57600 | 48.0 | Pre-cleaning inspection | 1.53 | AS_SOON_AS_POSSIBLE |  | 500 | 57600 | 57600 | 57600 | 2022-11-22T08:00:00.0 | 2022-11-23T17:00:00.0 | 2022-12-28T08:00:00.0 | 2022-12-29T17:00:00.0 | 54 |  | 2022-01-19T15:07:48.0 | 1.53 | FIXED_DURATION | True | PRORATED | True | 2022-11-23T17:00:00.0 | 54 | 2 | 195 |  | 180 | 55 FS | 892800 | 892800 | 53 FS |  |  |
| 2022-11-24T08:00:00.0 | h | h | 921600 | 921600 | 76.8 | Clean Internal | 1.54 | AS_SOON_AS_POSSIBLE |  | 500 | 460800 | 460800 | 460800 | 2022-11-24T08:00:00.0 | 2022-12-12T17:00:00.0 | 2022-12-30T08:00:00.0 | 2023-01-17T17:00:00.0 | 55 |  | 2022-01-19T15:07:48.0 | 1.54 | FIXED_DURATION | True | PRORATED | True | 2022-12-12T17:00:00.0 | 55 | 2 | 195 |  | 180 | 56 FS | 892800 | 892800 | 54 FS |  |  |
| 2022-12-13T08:00:00.0 | h | h | 28800 | 28800 | 24.0 | Post-cleaning inspection | 1.55 | AS_SOON_AS_POSSIBLE |  | 500 | 28800 | 28800 | 28800 | 2022-12-13T08:00:00.0 | 2022-12-13T17:00:00.0 | 2023-01-18T08:00:00.0 | 2023-01-18T17:00:00.0 | 56 |  | 2022-01-19T15:07:48.0 | 1.55 | FIXED_DURATION | True | PRORATED | True | 2022-12-13T17:00:00.0 | 56 | 2 | 195 |  | 180 | 57 FS | 892800 | 892800 | 55 FS |  |  |
| 2022-12-14T08:00:00.0 | h | h | 460800 | 460800 | 38.4 | Replace demister with new | 1.56 | AS_SOON_AS_POSSIBLE |  | 500 | 115200 | 115200 | 115200 | 2022-12-14T08:00:00.0 | 2022-12-17T17:00:00.0 | 2023-01-19T08:00:00.0 | 2023-01-23T17:00:00.0 | 57 |  | 2022-01-19T15:07:48.0 | 1.56 | FIXED_DURATION | True | PRORATED | True | 2022-12-17T17:00:00.0 | 57 | 2 | 195 |  | 180 | 58 FS | 892800 | 892800 | 56 FS | True |  |
| 2022-12-19T08:00:00.0 | h | h | 460800 | 460800 | 38.4 | Powerbrush for UTG @ CML (HW) | 1.57 | AS_SOON_AS_POSSIBLE |  | 500 | 230400 | 230400 | 230400 | 2022-12-19T08:00:00.0 | 2022-12-27T17:00:00.0 | 2023-01-24T08:00:00.0 | 2023-02-01T17:00:00.0 | 58 |  | 2022-01-19T15:07:48.0 | 1.57 | FIXED_DURATION | True | PRORATED | True | 2022-12-27T17:00:00.0 | 58 | 2 | 195 |  | 180 | 59 FS | 892800 | 892800 | 57 FS |  |  |
| 2022-12-28T08:00:00.0 | h | h | 230400 | 230400 | 192.0 | UTG @ CML | 1.58 | AS_SOON_AS_POSSIBLE |  | 500 | 230400 | 230400 | 230400 | 2022-12-28T08:00:00.0 | 2023-01-05T17:00:00.0 | 2023-02-02T08:00:00.0 | 2023-02-10T17:00:00.0 | 59 |  | 2022-01-19T15:07:48.0 | 1.58 | FIXED_DURATION | True | PRORATED | True | 2023-01-05T17:00:00.0 | 59 | 2 | 195 |  | 180 | 60 FS | 892800 | 892800 | 58 FS |  |  |
| 2023-01-06T08:00:00.0 | h | h | 57600 | 57600 | 32.0 | Lift top cover and elbow / manhole cover for reinstatement (Using Crane) | 1.59 | AS_SOON_AS_POSSIBLE |  | 500 | 57600 | 57600 | 57600 | 2023-01-06T08:00:00.0 | 2023-01-07T17:00:00.0 | 2023-02-11T08:00:00.0 | 2023-02-13T17:00:00.0 | 60 |  | 2022-01-19T15:07:48.0 | 1.59 | FIXED_DURATION | True | PRORATED | True | 2023-01-07T17:00:00.0 | 60 | 2 | 195 |  | 180 | 61 FS | 892800 | 892800 | 59 FS |  |  |
| 2023-01-09T08:00:00.0 | h | h | 1612800 | 1612800 | 224.0 | Reinstate top cover and elbow / manhole cover / TFA | 1.60 | AS_SOON_AS_POSSIBLE |  | 500 | 403200 | 403200 | 403200 | 2023-01-09T08:00:00.0 | 2023-01-24T17:00:00.0 | 2023-02-14T08:00:00.0 | 2023-03-01T17:00:00.0 | 61 |  | 2022-01-19T15:07:48.0 | 1.60 | FIXED_DURATION | True | PRORATED | True | 2023-01-24T17:00:00.0 | 61 | 2 | 195 |  | 180 | 62 FS | 892800 | 892800 | 60 FS |  |  |
| 2023-01-25T08:00:00.0 | h | h | 1382400 | 1382400 | 192.0 | Despade / TFA | 1.61 | AS_SOON_AS_POSSIBLE |  | 500 | 345600 | 345600 | 345600 | 2023-01-25T08:00:00.0 | 2023-02-07T17:00:00.0 | 2023-03-02T08:00:00.0 | 2023-03-15T17:00:00.0 | 62 |  | 2022-01-19T15:07:48.0 | 1.61 | FIXED_DURATION | True | PRORATED | True | 2023-02-07T17:00:00.0 | 62 | 2 | 195 |  | 180 |  | 892800 | 892800 | 61 FS |  | 180 |
| 2022-12-13T08:00:00.0 | h | h | 57600 | 57600 | 48.0 | [Add08]NDT/ Inspection | 1.62 | AS_SOON_AS_POSSIBLE |  | 500 | 57600 | 57600 | 57600 | 2022-12-13T08:00:00.0 | 2022-12-14T17:00:00.0 | 2023-03-14T08:00:00.0 | 2023-03-15T17:00:00.0 | 170 |  | 2022-01-19T15:21:00.0 | 1.62 | FIXED_DURATION | True | PRORATED | True | 2022-12-14T17:00:00.0 | 63 | 2 | 195 |  | 420 |  | 2246400 | 2246400 | 171 FS |  | 420 |
| 2022-11-22T08:00:00.0 | h | h | 2073600 | 2073600 | 2304.0 | [Add08]Hotwork to install new v/v | 1.63 | AS_SOON_AS_POSSIBLE |  | 500 | 518400 | 518400 | 518400 | 2022-11-22T08:00:00.0 | 2022-12-12T17:00:00.0 | 2023-02-21T08:00:00.0 | 2023-03-13T17:00:00.0 | 171 |  | 2022-01-19T15:21:00.0 | 1.63 | FIXED_DURATION | True | PRORATED | True | 2022-12-12T17:00:00.0 | 64 | 2 | 195 |  | 420 | 170 FS | 2246400 | 2246400 | 172 FS |  |  |
| 2022-11-11T08:00:00.0 | h | h | 1036800 | 1036800 | 1152.0 | [Add08]Hotwork to remove N2 v/v (1" 1108Y) | 1.64 | AS_SOON_AS_POSSIBLE |  | 500 | 259200 | 259200 | 259200 | 2022-11-11T08:00:00.0 | 2022-11-21T17:00:00.0 | 2023-02-10T08:00:00.0 | 2023-02-20T17:00:00.0 | 172 |  | 2022-01-19T15:21:00.0 | 1.64 | FIXED_DURATION | True | PRORATED | True | 2022-11-21T17:00:00.0 | 65 | 2 | 195 |  | 420 | 171 FS | 2246400 | 2246400 | 184 FS |  |  |
| 2022-12-28T08:00:00.0 | h | h | 57600 | 57600 | 48.0 | Post clean inspection | 1.65 | AS_SOON_AS_POSSIBLE |  | 500 | 57600 | 57600 | 57600 | 2022-12-28T08:00:00.0 | 2022-12-29T17:00:00.0 | 2023-03-14T08:00:00.0 | 2023-03-15T17:00:00.0 | 173 |  | 2022-01-19T15:21:00.0 | 1.65 | FIXED_DURATION | True | PRORATED | True | 2022-12-29T17:00:00.0 | 66 | 2 | 195 |  | 360 |  | 1872000 | 1872000 | 176 FS |  | 360 |
| 2023-01-21T08:00:00.0 | h | h | 28800 | 28800 | 0.1 | Handback | 1.66 | AS_SOON_AS_POSSIBLE |  | 500 | 28800 | 28800 | 28800 | 2023-01-21T08:00:00.0 | 2023-01-21T17:00:00.0 | 2023-03-15T08:00:00.0 | 2023-03-15T17:00:00.0 | 174 |  | 2022-01-19T15:21:00.0 | 1.66 | FIXED_DURATION | True | PRORATED | True | 2023-01-21T17:00:00.0 | 67 | 2 | 195 |  | 240 |  | 1296000 | 1296000 | 185 FS |  | 240 |
| 2022-11-10T08:00:00.0 | h | h | 115200 | 115200 | 96.0 | UTG CML | 1.67 | AS_SOON_AS_POSSIBLE |  | 500 | 115200 | 115200 | 115200 | 2022-11-10T08:00:00.0 | 2022-11-14T17:00:00.0 | 2023-03-11T08:00:00.0 | 2023-03-15T17:00:00.0 | 175 |  | 2022-01-19T15:21:00.0 | 1.67 | FIXED_DURATION | True | PRORATED | True | 2022-11-14T17:00:00.0 | 68 | 2 | 195 |  | 600 |  | 2995200 | 2995200 | 182 FS |  | 600 |
| 2022-12-24T08:00:00.0 | h | h | 86400 | 86400 | 72.0 | Sulphide SCC Insp by MT | 1.68 | AS_SOON_AS_POSSIBLE |  | 500 | 86400 | 86400 | 86400 | 2022-12-24T08:00:00.0 | 2022-12-27T17:00:00.0 | 2023-02-15T08:00:00.0 | 2023-02-17T17:00:00.0 | 176 |  | 2022-01-19T15:21:00.0 | 1.68 | FIXED_DURATION | True | PRORATED | True | 2022-12-27T17:00:00.0 | 69 | 2 | 195 |  | 240 | 173 FS, 180 FS | 1296000 | 1296000 | 177 FS |  |  |

| start | actual_duration_units | leveling_delay_units | work | remaining_work | cost | name | wbs | constraint_type | priority | duration | duration_variance | remaining_duration | early_start | early_finish | late_start | late_finish | unique_id | created | outline_number | type | effort_driven | fixed_cost_accrual | active | finish | id | outline_level | parent_task_unique_id | constraint_date | total_slack | successors | start_slack | finish_slack | predecessors | overallocated | free_slack |
| --- | --- | --- | --- | --- | --- | --- | --- | --- | --- | --- | --- | --- | --- | --- | --- | --- | --- | --- | --- | --- | --- | --- | --- | --- | --- | --- | --- | --- | --- | --- | --- | --- | --- | --- | --- |
| 2022-12-07T08:00:00.0 | h | h | 1728000 | 1728000 | 144.0 | Power brush on weld seam | 1.69 | AS_SOON_AS_POSSIBLE | 500 | 432000 | 432000 | 432000 | 2022-12-07T08:00:00.0 | 2022-12-23T17:00:00.0 | 2023-01-28T08:00:00.0 | 2023-02-14T17:00:00.0 | 177 | 2022-01-19T15:21:00.0 | 1.69 | FIXED_DURATION | True | PRORATED | True | 2022-12-23T17:00:00.0 | 70 | 2 | 195 |  | 240 | 176 FS | 1296000 | 1296000 | 181 FS | True |  |
| 2022-12-07T08:00:00.0 | h | h | 2534400 | 2534400 | 352.0 | [CRER] Remove sightglass, and replaced with magnetic Sightglass | 1.70 | AS_SOON_AS_POSSIBLE | 500 | 633600 | 633600 | 633600 | 2022-12-07T08:00:00.0 | 2022-12-31T17:00:00.0 | 2023-02-18T08:00:00.0 | 2023-03-15T17:00:00.0 | 178 | 2022-01-19T15:21:00.0 | 1.70 | FIXED_DURATION | True | PRORATED | True | 2022-12-31T17:00:00.0 | 71 | 2 | 195 |  | 360 |  | 1814400 | 1814400 | 181 FS |  | 360 |
| 2022-12-31T08:00:00.0 | h | h | 1036800 | 1036800 | 144.0 | Boxup (incl TFA) | 1.71 | AS_SOON_AS_POSSIBLE | 500 | 259200 | 259200 | 259200 | 2022-12-31T08:00:00.0 | 2023-01-10T17:00:00.0 | 2023-02-22T08:00:00.0 | 2023-03-03T17:00:00.0 | 179 | 2022-01-19T15:21:00.0 | 1.71 | FIXED_DURATION | True | PRORATED | True | 2023-01-10T17:00:00.0 | 72 | 2 | 195 |  | 240 | 185 FS | 1296000 | 1296000 | 180 FS |  |  |
| 2022-12-28T08:00:00.0 | h | h | 172800 | 172800 | 144.0 | Final Inspection | 1.72 | AS_SOON_AS_POSSIBLE | 500 | 86400 | 86400 | 86400 | 2022-12-28T08:00:00.0 | 2022-12-30T17:00:00.0 | 2023-02-18T08:00:00.0 | 2023-02-21T17:00:00.0 | 180 | 2022-01-19T15:21:00.0 | 1.72 | FIXED_DURATION | True | PRORATED | True | 2022-12-30T17:00:00.0 | 73 | 2 | 195 |  | 240 | 179 FS | 1296000 | 1296000 | 176 FS |  |  |
| 2022-11-11T08:00:00.0 | h | h | 2534400 | 2534400 | 211.2 | Clean internal and clear all nozzle tappings and ease all isolation valves | 1.73 | AS_SOON_AS_POSSIBLE | 500 | 633600 | 633600 | 633600 | 2022-11-11T08:00:00.0 | 2022-12-06T17:00:00.0 | 2023-01-03T08:00:00.0 | 2023-01-27T17:00:00.0 | 181 | 2022-01-19T15:21:00.0 | 1.73 | FIXED_DURATION | True | PRORATED | True | 2022-12-06T17:00:00.0 | 74 | 2 | 195 |  | 240 | 177 FS, 178 FS | 1296000 | 1296000 | 184 FS |  |  |
| 2022-11-03T08:00:00.0 | h | h | 691200 | 691200 | 96.0 | Open end cover and clean | 1.74 | AS_SOON_AS_POSSIBLE | 500 | 172800 | 172800 | 172800 | 2022-11-03T08:00:00.0 | 2022-11-09T17:00:00.0 | 2022-12-26T08:00:00.0 | 2022-12-31T17:00:00.0 | 182 | 2022-01-19T15:21:00.0 | 1.74 | FIXED_DURATION | True | PRORATED | True | 2022-11-09T17:00:00.0 | 75 | 2 | 195 |  | 240 | 175 FS, 184 FS | 1296000 | 1296000 | 183 FS |  |  |
| 2022-10-24T08:00:00.0 | h | h | 1036800 | 1036800 | 144.0 | Spade | 1.75 | START_NO_EARLIER_THAN | 500 | 259200 | 259200 | 259200 | 2022-10-24T08:00:00.0 | 2022-11-02T17:00:00.0 | 2022-12-15T08:00:00.0 | 2022-12-24T17:00:00.0 | 183 | 2022-01-19T15:21:00.0 | 1.75 | FIXED_DURATION | True | PRORATED | True | 2022-11-02T17:00:00.0 | 76 | 2 | 195 | 2022-10-24T08:00:00.0 | 240 | 182 FS | 1296000 | 1296000 |  |  |  |
| 2022-11-10T08:00:00.0 | h | h | 28800 | 28800 | 24.0 | Preliminary inspection | 1.76 | AS_SOON_AS_POSSIBLE | 500 | 28800 | 28800 | 28800 | 2022-11-10T08:00:00.0 | 2022-11-10T17:00:00.0 | 2023-01-02T08:00:00.0 | 2023-01-02T17:00:00.0 | 184 | 2022-01-19T15:21:00.0 | 1.76 | FIXED_DURATION | True | PRORATED | True | 2022-11-10T17:00:00.0 | 77 | 2 | 195 |  | 240 | 172 FS, 181 FS | 1296000 | 1296000 | 182 FS |  |  |
| 2023-01-11T08:00:00.0 | h | h | 1036800 | 1036800 | 144.0 | Despade + TFA | 1.77 | AS_SOON_AS_POSSIBLE | 500 | 259200 | 259200 | 259200 | 2023-01-11T08:00:00.0 | 2023-01-20T17:00:00.0 | 2023-03-04T08:00:00.0 | 2023-03-14T17:00:00.0 | 185 | 2022-01-19T15:21:42.0 | 1.77 | FIXED_DURATION | True | PRORATED | True | 2023-01-20T17:00:00.0 | 78 | 2 | 195 |  | 240 | 174 FS | 1296000 | 1296000 | 179 FS |  |  |
|  |  |  |  |  |  |  |  | AS_SOON_AS_POSSIBLE |  |  |  |  |  |  |  |  | 194 |  |  |  |  |  | True |  | 79 |  |  |  |  |  |  |  |  |  |  |
