| start | leveling_delay_units | name | wbs | constraint_type | total_slack | priority | duration | remaining_duration | early_start | early_finish | late_start | late_finish | unique_id | summary | created | outline_number | type | fixed_cost_accrual | leveling_can_split | level_assignments | start_slack | guid | active | finish | id | rollup | outline_level | parent_task_unique_id | constraint_date | critical | milestone | successors | effort_driven | predecessors | finish_slack | free_slack | calendar_unique_id | text1 |
| --- | --- | --- | --- | --- | --- | --- | --- | --- | --- | --- | --- | --- | --- | --- | --- | --- | --- | --- | --- | --- | --- | --- | --- | --- | --- | --- | --- | --- | --- | --- | --- | --- | --- | --- | --- | --- | --- | --- |
| 2018-06-30T07:00:00.0 | ed | JIAK KIM PPVC, Singapore | 0 | AS_SOON_AS_POSSIBLE | 686400 | 500 | 44100000 | 44100000 | 2018-06-30T07:00:00.0 | 2022-03-01T15:00:00.0 | 2018-08-01T07:00:00.0 | 2022-03-01T15:00:00.0 | 0 | True | 2014-11-11T19:54:00.0 | 0 | FIXED_DURATION | PRORATED | True | True | 686400 | 8cee78d1-fd4c-ec11-bf9c-a4c3f0a9aeba | True | 2022-03-01T15:00:00.0 |  |  |  |  |  |  |  |  |  |  |  |  |  |  |
| 2018-06-30T07:00:00.0 | ed | PPVC Condominium PROJECT | 1 | AS_SOON_AS_POSSIBLE | 686400 | 500 | 44100000 | 44100000 | 2018-06-30T07:00:00.0 | 2022-03-01T15:00:00.0 | 2018-08-01T07:00:00.0 | 2022-03-01T15:00:00.0 | 2475 | True | 2017-10-30T17:42:00.0 | 1 | FIXED_DURATION | PRORATED | True | True | 686400 | e7ee78d1-fd4c-ec11-bf9c-a4c3f0a9aeba | True | 2022-03-01T15:00:00.0 | 1 | True | 1 | 0 |  |  |  |  |  |  |  |  |  |  |
| 2018-06-30T07:00:00.0 | ed | Key Dates | 1.1 | AS_SOON_AS_POSSIBLE | 686400 | 500 | 44100000 | 44100000 | 2018-06-30T07:00:00.0 | 2022-03-01T15:00:00.0 | 2018-08-01T07:00:00.0 | 2022-03-01T15:00:00.0 | 2474 | True | 2017-10-30T17:42:00.0 | 1.1 | FIXED_DURATION | PRORATED | True | True | 686400 | e6ee78d1-fd4c-ec11-bf9c-a4c3f0a9aeba | True | 2022-03-01T15:00:00.0 | 2 | True | 2 | 2475 |  |  |  |  |  |  |  |  |  |  |
| 2018-08-01T07:00:00.0 | ed | Letter of Award (LOA) | 1.1.1 | START_NO_EARLIER_THAN |  | 500 |  |  | 2018-08-01T07:00:00.0 | 2018-08-01T07:00:00.0 | 2018-08-01T07:00:00.0 | 2018-08-01T07:00:00.0 | 2601 |  | 2018-03-19T16:12:00.0 | 1.1.1 |  | PRORATED | True | True |  | 0aef78d1-fd4c-ec11-bf9c-a4c3f0a9aeba | True | 2018-08-01T07:00:00.0 | 3 |  | 3 | 2474 | 2018-08-01T07:00:00.0 | True | True | 208 3024000 FS, 2256 5054400 FS, 2676 1036800 FS | True |  |  |  |  |  |
| 2018-11-01T11:00:00.0 | ed | Site Possesion Date | 1.1.2 | START_NO_EARLIER_THAN | 28800 | 500 |  |  | 2018-11-01T11:00:00.0 | 2018-11-01T11:00:00.0 | 2018-11-02T13:00:00.0 | 2018-11-02T13:00:00.0 | 208 |  | 2015-07-09T15:42:00.0 | 1.1.2 |  | PRORATED | True | True | 28800 | 8eee78d1-fd4c-ec11-bf9c-a4c3f0a9aeba | True | 2018-11-01T11:00:00.0 | 4 |  | 3 | 2474 | 2018-10-01T07:00:00.0 |  | True | 2306 518400 SS | True | 2601 3024000 FS | 28800 |  |  |  |
| 2019-01-02T15:00:00.0 | ed | Contract Commencement Date | 1.1.3 | AS_SOON_AS_POSSIBLE |  | 500 |  |  | 2019-01-02T15:00:00.0 | 2019-01-02T15:00:00.0 | 2019-01-02T15:00:00.0 | 2019-01-02T15:00:00.0 | 2256 |  | 2017-10-09T14:25:00.0 | 1.1.3 |  | PRORATED | True | True |  | c6ee78d1-fd4c-ec11-bf9c-a4c3f0a9aeba | True | 2019-01-02T15:00:00.0 | 5 |  | 3 | 2474 |  | True | True | 1057 -777600 FS, 2045 FS, 2650 FS, 1705 518400 FS | True | 2601 5054400 FS |  |  |  |  |
| 2021-06-05T19:00:00.0 | ed | Completion of Tower Structure (Blk 1) | 1.1.4 | AS_SOON_AS_POSSIBLE | 5299200 | 500 |  |  | 2021-06-05T19:00:00.0 | 2021-06-05T19:00:00.0 | 2022-02-01T16:00:00.0 | 2022-02-01T16:00:00.0 | 1718 |  | 2017-07-04T10:27:00.0 | 1.1.4 |  | PRORATED | True | True | 5299200 | acee78d1-fd4c-ec11-bf9c-a4c3f0a9aeba | True | 2021-06-05T19:00:00.0 | 6 |  | 3 | 2474 |  |  | True |  | True | 1437 FS | 5299200 | 5299200 |  |  |
| 2021-06-29T15:00:00.0 | ed | Completion of Tower Structure (Blk 2) | 1.1.5 | AS_SOON_AS_POSSIBLE | 4780800 | 500 |  |  | 2021-06-29T15:00:00.0 | 2021-06-29T15:00:00.0 | 2022-02-01T16:00:00.0 | 2022-02-01T16:00:00.0 | 2290 |  | 2017-10-12T18:13:00.0 | 1.1.5 |  | PRORATED | True | True | 4780800 | d3ee78d1-fd4c-ec11-bf9c-a4c3f0a9aeba | True | 2021-06-29T15:00:00.0 | 7 |  | 3 | 2474 |  |  | True |  | True | 2133 FS | 4780800 | 4780800 |  |  |
| 2021-05-11T09:00:00.0 | ed | Substation Hand Over to PG | 1.1.6 | AS_SOON_AS_POSSIBLE | 6480000 | 500 |  |  | 2021-05-11T09:00:00.0 | 2021-05-11T09:00:00.0 | 2022-03-01T15:00:00.0 | 2022-03-01T15:00:00.0 | 2284 |  | 2017-10-09T16:33:00.0 | 1.1.6 |  | PRORATED | True | True | 6480000 | d0ee78d1-fd4c-ec11-bf9c-a4c3f0a9aeba | True | 2021-05-11T09:00:00.0 | 8 |  | 3 | 2474 |  |  | True | 2299 FF | True | 2281 -3240000 SS | 6480000 |  |  |  |
| 2021-08-18T07:00:00.0 | ed | Power Turn on | 1.1.7 | AS_SOON_AS_POSSIBLE | 4320000 | 500 |  |  | 2021-08-18T07:00:00.0 | 2021-08-18T07:00:00.0 | 2022-03-01T15:00:00.0 | 2022-03-01T15:00:00.0 | 2281 |  | 2017-10-09T16:32:00.0 | 1.1.7 |  | PRORATED | True | True | 4320000 | cdee78d1-fd4c-ec11-bf9c-a4c3f0a9aeba | True | 2021-08-18T07:00:00.0 | 9 |  | 3 | 2474 |  |  | True | 2284 -3240000 SS | True | 949 -6480000 SS | 4320000 |  |  |  |
| 2021-11-03T13:00:00.0 | ed | Water Turn on | 1.1.8 | AS_SOON_AS_POSSIBLE | 2592000 | 500 |  |  | 2021-11-03T13:00:00.0 | 2021-11-03T13:00:00.0 | 2022-03-01T15:00:00.0 | 2022-03-01T15:00:00.0 | 2282 |  | 2017-10-09T16:32:00.0 | 1.1.8 |  | PRORATED | True | True | 2592000 | ceee78d1-fd4c-ec11-bf9c-a4c3f0a9aeba | True | 2021-11-03T13:00:00.0 | 10 |  | 3 | 2474 |  |  | True |  | True | 949 -3888000 SS | 2592000 | 2592000 |  |  |
| 2021-12-09T07:00:00.0 | ed | Pre RI | 1.1.9 | AS_SOON_AS_POSSIBLE | 1785600 | 500 |  |  | 2021-12-09T07:00:00.0 | 2021-12-09T07:00:00.0 | 2022-03-01T15:00:00.0 | 2022-03-01T15:00:00.0 | 2283 |  | 2017-10-09T16:32:00.0 | 1.1.9 |  | PRORATED | True | True | 1785600 | cfee78d1-fd4c-ec11-bf9c-a4c3f0a9aeba | True | 2021-12-09T07:00:00.0 | 11 |  | 3 | 2474 |  |  | True |  | True | 2558 SS | 1785600 | 1785600 |  |  |
| 2021-12-27T09:00:00.0 | ed | RI Inspection | 1.1.10 | AS_SOON_AS_POSSIBLE | 1411200 | 500 |  |  | 2021-12-27T09:00:00.0 | 2021-12-27T09:00:00.0 | 2022-03-01T15:00:00.0 | 2022-03-01T15:00:00.0 | 2285 |  | 2017-10-09T16:33:00.0 | 1.1.10 |  | PRORATED | True | True | 1411200 | d1ee78d1-fd4c-ec11-bf9c-a4c3f0a9aeba | True | 2021-12-27T09:00:00.0 | 12 |  | 3 | 2474 |  |  | True |  | True | 2558 -518400 FF | 1411200 | 1411200 |  |  |
| 2022-01-12T10:00:00.0 | ed | Target TOP Inspection Date | 1.1.11 | AS_SOON_AS_POSSIBLE | 1065600 | 500 |  |  | 2022-01-12T10:00:00.0 | 2022-01-12T10:00:00.0 | 2022-03-01T15:00:00.0 | 2022-03-01T15:00:00.0 | 2286 |  | 2017-10-09T16:33:00.0 | 1.1.11 |  | PRORATED | True | True | 1065600 | d2ee78d1-fd4c-ec11-bf9c-a4c3f0a9aeba | True | 2022-01-12T10:00:00.0 | 13 |  | 3 | 2474 |  |  | True |  | True | 2557 SS | 1065600 | 1065600 |  |  |
| 2022-03-01T15:00:00.0 | ed | TOP | 1.1.12 | AS_SOON_AS_POSSIBLE |  | 500 |  |  | 2022-03-01T15:00:00.0 | 2022-03-01T15:00:00.0 | 2022-03-01T15:00:00.0 | 2022-03-01T15:00:00.0 | 949 |  | 2015-07-14T14:14:00.0 | 1.1.12 |  | PRORATED | True | True |  | 92ee78d1-fd4c-ec11-bf9c-a4c3f0a9aeba | True | 2022-03-01T15:00:00.0 | 14 |  | 3 | 2474 |  | True | True | 2281 -6480000 SS, 2282 -3888000 SS | True | 286 FS |  |  |  |  |
| 2018-06-30T07:00:00.0 | ed | AUHTORITY APPROVAL (PP/WP/BP) | 1.1.13 | AS_SOON_AS_POSSIBLE | 1003200 | 500 | 7646400 | 7646400 | 2018-06-30T07:00:00.0 | 2019-02-19T08:00:00.0 | 2018-08-16T07:00:00.0 | 2022-03-01T15:00:00.0 | 19 | True | 2014-11-11T19:55:00.0 | 1.1.13 | FIXED_DURATION | PRORATED | True | True | 1003200 | 8dee78d1-fd4c-ec11-bf9c-a4c3f0a9aeba | True | 2019-02-19T08:00:00.0 | 15 | True | 3 | 2474 |  |  |  |  |  |  | 24302400 | 1003200 | 4 |  |
| 2018-06-30T07:00:00.0 | ed | PP Submission & Approval (by Client) | 1.1.13.1 | START_NO_EARLIER_THAN | 1003200 | 500 |  |  | 2018-06-30T07:00:00.0 | 2018-06-30T07:00:00.0 | 2018-08-16T07:00:00.0 | 2018-08-16T07:00:00.0 | 1046 |  | 2016-05-17T11:52:00.0 | 1.1.13.1 |  | PRORATED | True | True | 1003200 | 93ee78d1-fd4c-ec11-bf9c-a4c3f0a9aeba | True | 2018-06-30T07:00:00.0 | 16 |  | 4 | 19 | 2018-06-30T07:00:00.0 |  | True | 2041 4060800 FS | True |  | 1003200 |  |  |  |
| 2018-11-01T14:00:00.0 | ed | WP Submission & Approval (by Client) | 1.1.13.2 | AS_SOON_AS_POSSIBLE | 1003200 | 500 | 1944000 | 1944000 | 2018-11-01T14:00:00.0 | 2018-12-29T15:00:00.0 | 2018-12-15T14:00:00.0 | 2019-02-14T15:00:00.0 | 2041 |  | 2016-05-17T11:52:00.0 | 1.1.13.2 |  | PRORATED | True | True | 1003200 | b2ee78d1-fd4c-ec11-bf9c-a4c3f0a9aeba | True | 2018-12-29T15:00:00.0 | 17 |  | 4 | 19 |  |  |  | 1725 907200 FS, 2259 FS | True | 1046 4060800 FS | 1003200 |  |  |  |
| 2019-01-26T14:00:00.0 | ed | BP Submission & Approval (by Client) | 1.1.13.3 | AS_SOON_AS_POSSIBLE | 23006400 | 500 | 734400 | 734400 | 2019-01-26T14:00:00.0 | 2019-02-19T08:00:00.0 | 2021-12-09T07:00:00.0 | 2021-12-31T14:00:00.0 | 1725 |  | 2017-07-04T10:29:00.0 | 1.1.13.3 |  | PRORATED | True | True | 23006400 | adee78d1-fd4c-ec11-bf9c-a4c3f0a9aeba | True | 2019-02-19T08:00:00.0 | 18 |  | 4 | 19 |  |  |  |  | True | 2041 907200 FS | 23006400 | 23006400 |  |  |
| 2018-09-01T09:00:00.0 | ed | PUB DC Clearance on Diversion | 1.1.13.4 | AS_SOON_AS_POSSIBLE | 22723200 | 500 | 3110400 | 3110400 | 2018-09-01T09:00:00.0 | 2018-12-04T16:00:00.0 | 2021-07-02T18:00:00.0 | 2021-10-05T12:00:00.0 | 2676 |  | 2018-06-12T17:25:00.0 | 1.1.13.4 |  | PRORATED | True | True | 22723200 | 47ef78d1-fd4c-ec11-bf9c-a4c3f0a9aeba | True | 2018-12-04T16:00:00.0 | 19 |  | 4 | 19 |  |  |  | 2650 518400 FS | True | 2601 1036800 FS | 22723200 | 259200 |  |  |
| 2018-12-08T07:00:00.0 | ed | Structural Design Submission & Approval | 1.1.14 | AS_SOON_AS_POSSIBLE | 19756800 | 500 | 9158400 | 9158400 | 2018-12-08T07:00:00.0 | 2019-09-14T10:00:00.0 | 2018-12-08T07:00:00.0 | 2022-03-01T15:00:00.0 | 2409 | True | 2017-10-28T09:19:00.0 | 1.1.14 | FIXED_DURATION | PRORATED | True | True |  | e2ee78d1-fd4c-ec11-bf9c-a4c3f0a9aeba | True | 2019-09-14T10:00:00.0 | 20 | True | 3 | 2474 |  |  |  |  |  |  | 19756800 |  |  |  |
| 2018-12-08T07:00:00.0 | ed | Design Team Mobilization | 1.1.14.1 | AS_SOON_AS_POSSIBLE |  | 500 | 907200 | 907200 | 2018-12-08T07:00:00.0 | 2019-01-05T18:00:00.0 | 2018-12-08T07:00:00.0 | 2019-01-05T18:00:00.0 | 1057 |  | 2016-05-18T14:37:00.0 | 1.1.14.1 |  | PRORATED | True | True |  | 94ee78d1-fd4c-ec11-bf9c-a4c3f0a9aeba | True | 2019-01-05T18:00:00.0 | 21 |  | 4 | 2409 |  | True |  | 2257 FS | True | 2256 -777600 FS |  |  |  |  |
| 2019-01-05T18:00:00.0 | ed | Piling&Foundation (Blk 1) Design | 1.1.14.2 | AS_SOON_AS_POSSIBLE |  | 500 | 1296000 | 1296000 | 2019-01-05T18:00:00.0 | 2019-02-14T15:00:00.0 | 2019-01-05T18:00:00.0 | 2019-02-14T15:00:00.0 | 2257 |  | 2017-10-09T14:47:00.0 | 1.1.14.2 |  | PRORATED | True | True |  | c7ee78d1-fd4c-ec11-bf9c-a4c3f0a9aeba | True | 2019-02-14T15:00:00.0 | 22 |  | 4 | 2409 |  | True |  | 2259 FS, 2594 FS, 2577 FS, 1060 FS | True | 1057 FS |  |  |  |  |
| 2019-02-14T15:00:00.0 | ed | Piling&Foundation (Blk 1) AC/BCA Approval | 1.1.14.3 | AS_SOON_AS_POSSIBLE |  | 500 | 1512000 | 1512000 | 2019-02-14T15:00:00.0 | 2019-04-01T17:00:00.0 | 2019-02-14T15:00:00.0 | 2019-04-01T17:00:00.0 | 2259 |  | 2017-10-09T14:49:00.0 | 1.1.14.3 |  | PRORATED | True | True |  | c8ee78d1-fd4c-ec11-bf9c-a4c3f0a9aeba | True | 2019-04-01T17:00:00.0 | 23 |  | 4 | 2409 |  | True |  | 1705 SF, 1402 FS | True | 2257 FS, 2041 FS |  |  |  |  |
| 2019-02-14T15:00:00.0 | ed | Piling&Foundation (Blk 2) Design | 1.1.14.4 | AS_SOON_AS_POSSIBLE | 6681600 | 500 | 1296000 | 1296000 | 2019-02-14T15:00:00.0 | 2019-03-25T11:00:00.0 | 2019-12-14T16:00:00.0 | 2020-01-24T12:00:00.0 | 2594 |  | 2017-10-09T14:47:00.0 | 1.1.14.4 |  | PRORATED | True | True | 6681600 | 06ef78d1-fd4c-ec11-bf9c-a4c3f0a9aeba | True | 2019-03-25T11:00:00.0 | 24 |  | 4 | 2409 |  |  |  | 2595 FS, 2599 FS | True | 2257 FS | 6681600 |  |  |  |
| 2019-03-25T11:00:00.0 | ed | Piling&Foundation (Blk 2) AC/BCA Approval | 1.1.14.5 | AS_SOON_AS_POSSIBLE | 22521600 | 500 | 1512000 | 1512000 | 2019-03-25T11:00:00.0 | 2019-05-10T14:00:00.0 | 2022-01-14T13:00:00.0 | 2022-03-01T15:00:00.0 | 2595 |  | 2017-10-09T14:49:00.0 | 1.1.14.5 |  | PRORATED | True | True | 22521600 | 07ef78d1-fd4c-ec11-bf9c-a4c3f0a9aeba | True | 2019-05-10T14:00:00.0 | 25 |  | 4 | 2409 |  |  |  |  | True | 2594 FS | 22521600 | 22521600 |  |  |
| 2019-02-14T15:00:00.0 | ed | ERSS Design | 1.1.14.6 | AS_SOON_AS_POSSIBLE | 2592000 | 500 | 1209600 | 1209600 | 2019-02-14T15:00:00.0 | 2019-03-22T09:00:00.0 | 2019-06-12T17:00:00.0 | 2019-07-19T11:00:00.0 | 2577 |  | 2016-05-18T14:37:00.0 | 1.1.14.6 |  | PRORATED | True | True | 2592000 | faee78d1-fd4c-ec11-bf9c-a4c3f0a9aeba | True | 2019-03-22T09:00:00.0 | 26 |  | 4 | 2409 |  |  |  | 2579 FS, 1060 FS | True | 2257 FS | 2592000 |  |  |  |
| 2019-03-22T09:00:00.0 | ed | ERSS AC/BCA Approval | 1.1.14.7 | AS_SOON_AS_POSSIBLE | 3110400 | 500 | 1080000 | 1080000 | 2019-03-22T09:00:00.0 | 2019-04-24T12:00:00.0 | 2019-08-13T07:00:00.0 | 2019-09-14T10:00:00.0 | 2579 |  | 2016-05-18T14:37:00.0 | 1.1.14.7 |  | PRORATED | True | True | 3110400 | fbee78d1-fd4c-ec11-bf9c-a4c3f0a9aeba | True | 2019-04-24T12:00:00.0 | 27 |  | 4 | 2409 |  |  |  | 2492 FS | True | 2577 FS | 3110400 | 3110400 |  |  |
| 2019-03-22T09:00:00.0 | ed | Sub-structure (Blk 1) Design | 1.1.14.8 | AS_SOON_AS_POSSIBLE | 5184000 | 500 | 604800 | 604800 | 2019-03-22T09:00:00.0 | 2019-04-10T12:00:00.0 | 2019-11-14T14:00:00.0 | 2019-12-02T17:00:00.0 | 1060 |  | 2016-05-18T14:38:00.0 | 1.1.14.8 |  | PRORATED | True | True | 5184000 | 95ee78d1-fd4c-ec11-bf9c-a4c3f0a9aeba | True | 2019-04-10T12:00:00.0 | 28 |  | 4 | 2409 |  |  |  | 1062 FS, 2599 FS, 2384 FS | True | 2577 FS, 2257 FS | 5184000 |  |  |  |
| 2019-04-10T13:00:00.0 | ed | Sub-structure (Blk 1) AC/BCA Approval | 1.1.14.9 | AS_SOON_AS_POSSIBLE | 5184000 | 500 | 1512000 | 1512000 | 2019-04-10T13:00:00.0 | 2019-05-27T15:00:00.0 | 2019-12-02T17:00:00.0 | 2020-01-17T19:00:00.0 | 1062 |  | 2016-05-18T14:40:00.0 | 1.1.14.9 |  | PRORATED | True | True | 5184000 | 96ee78d1-fd4c-ec11-bf9c-a4c3f0a9aeba | True | 2019-05-27T15:00:00.0 | 29 |  | 4 | 2409 |  |  |  | 1423 FS | True | 1060 FS | 5184000 | 5184000 |  |  |
| 2019-04-10T13:00:00.0 | ed | Sub-structure (Blk 2 & Carpark) Design | 1.1.14.10 | AS_SOON_AS_POSSIBLE | 6336000 | 500 | 604800 | 604800 | 2019-04-10T13:00:00.0 | 2019-04-27T16:00:00.0 | 2020-01-24T13:00:00.0 | 2020-02-12T16:00:00.0 | 2599 |  | 2016-05-18T14:38:00.0 | 1.1.14.10 |  | PRORATED | True | True | 6336000 | 08ef78d1-fd4c-ec11-bf9c-a4c3f0a9aeba | True | 2019-04-27T16:00:00.0 | 30 |  | 4 | 2409 |  |  |  | 2600 FS, 2604 FS | True | 1060 FS, 2594 FS | 6336000 |  |  |  |
| 2019-04-27T16:00:00.0 | ed | Sub-structure (Blk 2 & Carpark) AC/BCA Approval | 1.1.14.11 | AS_SOON_AS_POSSIBLE | 20390400 | 500 | 1512000 | 1512000 | 2019-04-27T16:00:00.0 | 2019-06-13T18:00:00.0 | 2021-11-12T08:00:00.0 | 2021-12-28T10:00:00.0 | 2600 |  | 2016-05-18T14:40:00.0 | 1.1.14.11 |  | PRORATED | True | True | 20390400 | 09ef78d1-fd4c-ec11-bf9c-a4c3f0a9aeba | True | 2019-06-13T18:00:00.0 | 31 |  | 4 | 2409 |  |  |  |  | True | 2599 FS | 20390400 | 20390400 |  |  |
| 2019-04-10T13:00:00.0 | ed | L1-L2 Structure (Blk 1) Design | 1.1.14.12 | AS_SOON_AS_POSSIBLE | 5961600 | 500 | 907200 | 907200 | 2019-04-10T13:00:00.0 | 2019-05-08T11:00:00.0 | 2020-01-08T10:00:00.0 | 2020-02-04T09:00:00.0 | 2384 |  | 2017-10-27T09:41:00.0 | 1.1.14.12 |  | PRORATED | True | True | 5961600 | deee78d1-fd4c-ec11-bf9c-a4c3f0a9aeba | True | 2019-05-08T11:00:00.0 | 32 |  | 4 | 2409 |  |  |  | 2382 FS, 2604 FS, 1063 FS | True | 1060 FS | 5961600 |  |  |  |
| 2019-05-08T11:00:00.0 | ed | L1-L2 Structure (Blk 1) AC/BCA Approval | 1.1.14.13 | AS_SOON_AS_POSSIBLE | 5184000 | 500 | 1512000 | 1512000 | 2019-05-08T11:00:00.0 | 2019-06-22T14:00:00.0 | 2019-12-30T16:00:00.0 | 2020-02-14T18:00:00.0 | 2382 |  | 2017-10-27T09:40:00.0 | 1.1.14.13 |  | PRORATED | True | True | 5184000 | ddee78d1-fd4c-ec11-bf9c-a4c3f0a9aeba | True | 2019-06-22T14:00:00.0 | 33 |  | 4 | 2409 |  |  |  | 2586 FS | True | 2384 FS | 5184000 | 5184000 |  |  |
| 2019-05-08T11:00:00.0 | ed | L1-L2 Structure (Blk 2) Design | 1.1.14.14 | AS_SOON_AS_POSSIBLE | 6134400 | 500 | 907200 | 907200 | 2019-05-08T11:00:00.0 | 2019-06-05T10:00:00.0 | 2020-02-12T16:00:00.0 | 2020-03-10T15:00:00.0 | 2604 |  | 2017-10-27T09:41:00.0 | 1.1.14.14 |  | PRORATED | True | True | 6134400 | 0bef78d1-fd4c-ec11-bf9c-a4c3f0a9aeba | True | 2019-06-05T10:00:00.0 | 34 |  | 4 | 2409 |  |  |  | 2605 FS, 2270 FS | True | 2384 FS, 2599 FS | 6134400 |  |  |  |
| 2019-06-05T10:00:00.0 | ed | L1-L2 Structure (Blk 2) AC/BCA Approval | 1.1.14.15 | AS_SOON_AS_POSSIBLE | 19584000 | 500 | 1512000 | 1512000 | 2019-06-05T10:00:00.0 | 2019-07-20T12:00:00.0 | 2021-11-12T08:00:00.0 | 2021-12-28T10:00:00.0 | 2605 |  | 2017-10-27T09:40:00.0 | 1.1.14.15 |  | PRORATED | True | True | 19584000 | 0cef78d1-fd4c-ec11-bf9c-a4c3f0a9aeba | True | 2019-07-20T12:00:00.0 | 35 |  | 4 | 2409 |  |  |  |  | True | 2604 FS | 19584000 | 19584000 |  |  |
| 2019-05-08T11:00:00.0 | ed | Superstructure (Blk 1) Design | 1.1.14.16 | AS_SOON_AS_POSSIBLE | 6134400 | 500 | 907200 | 907200 | 2019-05-08T11:00:00.0 | 2019-06-05T10:00:00.0 | 2020-02-12T16:00:00.0 | 2020-03-10T15:00:00.0 | 1063 |  | 2016-05-18T14:41:00.0 | 1.1.14.16 |  | PRORATED | True | True | 6134400 | 97ee78d1-fd4c-ec11-bf9c-a4c3f0a9aeba | True | 2019-06-05T10:00:00.0 | 36 |  | 4 | 2409 |  |  |  | 2266 FS, 2270 FS, 2477 FS | True | 2384 FS | 6134400 |  |  |  |
| 2019-06-05T10:00:00.0 | ed | Superstructure (Blk 1) AC/BCA Approval | 1.1.14.17 | AS_SOON_AS_POSSIBLE | 6278400 | 500 | 1512000 | 1512000 | 2019-06-05T10:00:00.0 | 2019-07-20T12:00:00.0 | 2020-03-17T08:00:00.0 | 2020-05-02T10:00:00.0 | 2266 |  | 2017-10-09T15:12:00.0 | 1.1.14.17 |  | PRORATED | True | True | 6278400 | c9ee78d1-fd4c-ec11-bf9c-a4c3f0a9aeba | True | 2019-07-20T12:00:00.0 | 37 |  | 4 | 2409 |  |  |  | 1427 FS | True | 1063 FS | 6278400 | 6220800 |  |  |
| 2019-06-05T10:00:00.0 | ed | Superstructure (Blk 2) Design | 1.1.14.18 | AS_SOON_AS_POSSIBLE | 6134400 | 500 | 907200 | 907200 | 2019-06-05T10:00:00.0 | 2019-07-02T09:00:00.0 | 2020-03-10T15:00:00.0 | 2020-04-07T14:00:00.0 | 2270 |  | 2017-10-09T15:20:00.0 | 1.1.14.18 |  | PRORATED | True | True | 6134400 | cbee78d1-fd4c-ec11-bf9c-a4c3f0a9aeba | True | 2019-07-02T09:00:00.0 | 38 |  | 4 | 2409 |  |  |  | 2268 FS, 2477 FS | True | 1063 FS, 2604 FS | 6134400 |  |  |  |
| 2019-07-02T09:00:00.0 | ed | Superstructure (Blk 2) AC/BCA Approval | 1.1.14.19 | AS_SOON_AS_POSSIBLE | 6134400 | 500 | 1512000 | 1512000 | 2019-07-02T09:00:00.0 | 2019-08-17T11:00:00.0 | 2020-04-07T14:00:00.0 | 2020-05-23T16:00:00.0 | 2268 |  | 2017-10-09T15:20:00.0 | 1.1.14.19 |  | PRORATED | True | True | 6134400 | caee78d1-fd4c-ec11-bf9c-a4c3f0a9aeba | True | 2019-08-17T11:00:00.0 | 39 |  | 4 | 2409 |  |  |  | 2121 FS | True | 2270 FS | 6134400 | 6134400 |  |  |
| 2019-07-02T09:00:00.0 | ed | Roof Design | 1.1.14.20 | AS_SOON_AS_POSSIBLE | 13305600 | 500 | 907200 | 907200 | 2019-07-02T09:00:00.0 | 2019-07-30T08:00:00.0 | 2021-02-27T09:00:00.0 | 2021-03-27T08:00:00.0 | 2477 |  | 2017-10-30T20:50:00.0 | 1.1.14.20 |  | PRORATED | True | True | 13305600 | e9ee78d1-fd4c-ec11-bf9c-a4c3f0a9aeba | True | 2019-07-30T08:00:00.0 | 40 |  | 4 | 2409 |  |  |  | 2479 FS | True | 2270 FS, 1063 FS | 13305600 |  |  |  |
| 2019-07-30T08:00:00.0 | ed | Roof BCA Approval | 1.1.14.21 | AS_SOON_AS_POSSIBLE | 14256000 | 500 | 1512000 | 1512000 | 2019-07-30T08:00:00.0 | 2019-09-14T10:00:00.0 | 2021-05-10T08:00:00.0 | 2021-06-24T10:00:00.0 | 2479 |  | 2017-10-30T20:51:00.0 | 1.1.14.21 |  | PRORATED | True | True | 14256000 | eaee78d1-fd4c-ec11-bf9c-a4c3f0a9aeba | True | 2019-09-14T10:00:00.0 | 41 |  | 4 | 2409 |  |  |  | 1436 FS, 2132 FS | True | 2477 FS | 14256000 | 13132800 |  |  |
| 2019-01-02T15:00:00.0 | ed | PPVC DESIGN MOCK UP | 1.1.15 | AS_SOON_AS_POSSIBLE | 1468800 | 500 | 10022400 | 10022400 | 2019-01-02T15:00:00.0 | 2019-11-02T16:00:00.0 | 2019-03-09T10:00:00.0 | 2020-01-09T11:00:00.0 | 2472 | True | 2017-10-30T17:40:00.0 | 1.1.15 | FIXED_DURATION | PRORATED | True | True | 1468800 | e5ee78d1-fd4c-ec11-bf9c-a4c3f0a9aeba | True | 2019-11-02T16:00:00.0 | 42 | True | 3 | 2474 |  |  |  |  |  |  | 1468800 | 1468800 |  |  |
| 2019-01-02T15:00:00.0 | ed | PPVC Design Development | 1.1.15.1 | AS_SOON_AS_POSSIBLE | 288000 | 500 | 5054400 | 5054400 | 2019-01-02T15:00:00.0 | 2019-06-05T10:00:00.0 | 2019-01-15T14:00:00.0 | 2019-06-18T09:00:00.0 | 2045 |  | 2017-07-07T09:55:00.0 | 1.1.15.1 |  | PRORATED | True | True | 288000 | b3ee78d1-fd4c-ec11-bf9c-a4c3f0a9aeba | True | 2019-06-05T10:00:00.0 | 43 |  | 4 | 2472 |  |  |  | 2046 FS | True | 2256 FS | 288000 |  |  |  |
| 2019-06-05T10:00:00.0 | ed | PPVC Finishes Selection | 1.1.15.2 | AS_SOON_AS_POSSIBLE | 288000 | 500 | 2073600 | 2073600 | 2019-06-05T10:00:00.0 | 2019-08-06T15:00:00.0 | 2019-06-18T09:00:00.0 | 2019-08-20T14:00:00.0 | 2046 |  | 2017-07-07T09:55:00.0 | 1.1.15.2 |  | PRORATED | True | True | 288000 | b4ee78d1-fd4c-ec11-bf9c-a4c3f0a9aeba | True | 2019-08-06T15:00:00.0 | 44 |  | 4 | 2472 |  |  |  | 2047 FS | True | 2045 FS | 288000 |  |  |  |
| 2019-08-06T15:00:00.0 | ed | PPVC Mock Up Preparation & Approval | 1.1.15.3 | AS_SOON_AS_POSSIBLE | 1468800 | 500 | 2894400 | 2894400 | 2019-08-06T15:00:00.0 | 2019-11-02T16:00:00.0 | 2019-10-12T10:00:00.0 | 2020-01-09T11:00:00.0 | 2047 |  | 2017-07-07T09:55:00.0 | 1.1.15.3 |  | PRORATED | True | True | 1468800 | b5ee78d1-fd4c-ec11-bf9c-a4c3f0a9aeba | True | 2019-11-02T16:00:00.0 | 45 |  | 4 | 2472 |  |  |  | 2048 FS | True | 2046 FS | 1468800 |  |  |  |
| 2019-11-02T16:00:00.0 | ed | PPVC Mock Up Signed Off | 1.1.15.4 | AS_SOON_AS_POSSIBLE | 288000 | 500 |  |  | 2019-11-02T16:00:00.0 | 2019-11-02T16:00:00.0 | 2019-11-15T15:00:00.0 | 2019-11-15T15:00:00.0 | 2048 |  | 2017-07-07T09:55:00.0 | 1.1.15.4 |  | PRORATED | True | True | 288000 | b6ee78d1-fd4c-ec11-bf9c-a4c3f0a9aeba | True | 2019-11-02T16:00:00.0 | 46 |  | 4 | 2472 |  |  | True | 2241 2592000 FS | True | 2047 FS | 288000 |  |  |  |
| 2018-11-16T13:00:00.0 | ed | CONSTRUCTION | 1.1.16 | AS_SOON_AS_POSSIBLE | 28800 | 500 | 37368000 | 37368000 | 2018-11-16T13:00:00.0 | 2021-12-24T08:00:00.0 | 2018-11-17T14:00:00.0 | 2022-03-01T15:00:00.0 | 2483 | True | 2017-10-30T21:10:00.0 | 1.1.16 | FIXED_DURATION | PRORATED | True | True | 28800 | ecee78d1-fd4c-ec11-bf9c-a4c3f0a9aeba | True | 2021-12-24T08:00:00.0 | 47 | True | 3 | 2474 |  |  |  |  |  |  | 1440000 | 28800 |  | SHOF=106k m2 |
| 2018-11-16T13:00:00.0 | ed | Site Preperation and setting up | 1.1.16.1 | AS_SOON_AS_POSSIBLE | 28800 | 500 | 2160000 | 2160000 | 2018-11-16T13:00:00.0 | 2019-01-21T19:00:00.0 | 2018-11-17T14:00:00.0 | 2019-01-23T08:00:00.0 | 2306 |  | 2017-10-20T17:32:00.0 | 1.1.16.1 |  | PRORATED | True | True | 28800 | d9ee78d1-fd4c-ec11-bf9c-a4c3f0a9aeba | True | 2019-01-21T19:00:00.0 | 48 |  | 4 | 2483 |  |  |  | 2650 -648000 FS, 2323 1036800 FS | True | 208 518400 SS | 28800 |  |  |  |
| 2019-01-02T15:00:00.0 | ed | Drain Diversion | 1.1.16.2 | AS_SOON_AS_POSSIBLE | 21081600 | 500 | 4320000 | 4320000 | 2019-01-02T15:00:00.0 | 2019-05-13T16:00:00.0 | 2021-08-20T09:00:00.0 | 2021-12-28T10:00:00.0 | 2650 |  | 2018-03-19T19:54:00.0 | 1.1.16.2 |  | PRORATED | True | True | 21081600 | 31ef78d1-fd4c-ec11-bf9c-a4c3f0a9aeba | True | 2019-05-13T16:00:00.0 | 49 |  | 4 | 2483 |  |  |  |  | True | 2256 FS, 2306 -648000 FS, 2676 518400 FS | 21081600 | 21081600 |  |  |
| 2019-01-22T07:00:00.0 | ed | FOUNDATION | 1.1.16.3 | AS_SOON_AS_POSSIBLE | 720000 | 500 | 11232000 | 11232000 | 2019-01-22T07:00:00.0 | 2019-12-28T15:00:00.0 | 2019-02-23T10:00:00.0 | 2022-03-01T15:00:00.0 | 2390 | True | 2017-10-27T14:57:00.0 | 1.1.16.3 | FIXED_DURATION | PRORATED | True | True | 720000 | dfee78d1-fd4c-ec11-bf9c-a4c3f0a9aeba | True | 2019-12-28T15:00:00.0 | 50 | True | 4 | 2483 |  |  |  |  |  |  | 17424000 | 720000 |  |  |
| 2019-01-22T07:00:00.0 | ed | Pile Test (Including Mobilization) | 1.1.16.3.1 | AS_SOON_AS_POSSIBLE | 24393600 | 500 | 777600 | 777600 | 2019-01-22T07:00:00.0 | 2019-02-14T15:00:00.0 | 2022-02-05T07:00:00.0 | 2022-03-01T15:00:00.0 | 1705 |  | 2016-08-12T16:03:00.0 | 1.1.16.3.1 |  | PRORATED | True | True | 24393600 | abee78d1-fd4c-ec11-bf9c-a4c3f0a9aeba | True | 2019-02-14T15:00:00.0 | 51 |  | 5 | 2390 |  |  |  |  | True | 2259 SF, 2256 518400 FS | 24393600 | 24393600 |  |  |
| 2019-02-22T09:00:00.0 | ed | 1st Excavation For Piling | 1.1.16.3.2 | AS_SOON_AS_POSSIBLE | 28800 | 500 | 1728000 | 1728000 | 2019-02-22T09:00:00.0 | 2019-04-15T17:00:00.0 | 2019-02-23T10:00:00.0 | 2019-04-16T18:00:00.0 | 2323 |  | 2017-10-21T11:06:00.0 | 1.1.16.3.2 |  | PRORATED | True | True | 28800 | daee78d1-fd4c-ec11-bf9c-a4c3f0a9aeba | True | 2019-04-15T17:00:00.0 | 52 |  | 5 | 2390 |  |  |  | 1402 1209600 SS | True | 2306 1036800 FS | 28800 | 28800 |  |  |
| 2019-04-01T17:00:00.0 | ed | Piling Works | 1.1.16.3.3 | AS_SOON_AS_POSSIBLE |  | 500 | 5702400 | 5702400 | 2019-04-01T17:00:00.0 | 2019-09-21T17:00:00.0 | 2019-04-01T17:00:00.0 | 2019-09-21T17:00:00.0 | 1402 |  | 2016-08-04T11:44:00.0 | 1.1.16.3.3 |  | PRORATED | True | True |  | 9aee78d1-fd4c-ec11-bf9c-a4c3f0a9aeba | True | 2019-09-21T17:00:00.0 | 53 |  | 5 | 2390 |  | True |  | 2652 SS, 2492 -1036800 FS, 1423 FS | True | 2259 FS, 2323 1209600 SS |  |  |  |  |
| 2019-04-01T17:00:00.0 | ed | Diaphargm Wall Installation | 1.1.16.3.4 | AS_SOON_AS_POSSIBLE |  | 500 | 5702400 | 5702400 | 2019-04-01T17:00:00.0 | 2019-09-21T17:00:00.0 | 2019-04-01T17:00:00.0 | 2019-09-21T17:00:00.0 | 2652 |  | 2018-06-11T22:50:00.0 | 1.1.16.3.4 |  | PRORATED | True | True |  | 32ef78d1-fd4c-ec11-bf9c-a4c3f0a9aeba | True | 2019-09-21T17:00:00.0 | 54 |  | 5 | 2390 |  | True |  | 2492 -1036800 FS, 1423 FS | True | 1402 SS |  |  |  |  |
| 2019-08-21T15:00:00.0 | ed | Excavation Works | 1.1.16.3.5 | AS_SOON_AS_POSSIBLE |  | 500 | 4276800 | 4276800 | 2019-08-21T15:00:00.0 | 2019-12-28T15:00:00.0 | 2019-08-21T15:00:00.0 | 2019-12-28T15:00:00.0 | 2492 |  | 2017-11-24T11:07:00.0 | 1.1.16.3.5 |  | PRORATED | True | True |  | eeee78d1-fd4c-ec11-bf9c-a4c3f0a9aeba | True | 2019-12-28T15:00:00.0 | 55 |  | 5 | 2390 |  | True |  | 2656 777600 SS, 1423 -518400 FS | True | 2579 FS, 1402 -1036800 FS, 2652 -1036800 FS |  |  |  | 66,000m3, 750m3/d+10% |
| 2019-09-14T10:00:00.0 | ed | Struting Tie Beam | 1.1.16.3.6 | AS_SOON_AS_POSSIBLE | 18201600 | 500 | 2332800 | 2332800 | 2019-09-14T10:00:00.0 | 2019-11-23T09:00:00.0 | 2021-12-18T16:00:00.0 | 2022-03-01T15:00:00.0 | 2654 | True | 2018-06-11T22:55:00.0 | 1.1.16.3.6 | FIXED_DURATION | PRORATED | True | True | 18201600 | 34ef78d1-fd4c-ec11-bf9c-a4c3f0a9aeba | True | 2019-11-23T09:00:00.0 | 56 | True | 5 | 2390 |  |  |  |  |  |  | 18201600 | 18201600 |  |  |
| 2019-09-14T10:00:00.0 | ed | B1 Tie Beam | 1.1.16.3.6.1 | AS_SOON_AS_POSSIBLE | 18201600 | 500 | 777600 | 777600 | 2019-09-14T10:00:00.0 | 2019-10-07T18:00:00.0 | 2021-12-18T16:00:00.0 | 2022-01-13T11:00:00.0 | 2656 |  | 2018-06-11T22:55:00.0 | 1.1.16.3.6.1 |  | PRORATED | True | True | 18201600 | 36ef78d1-fd4c-ec11-bf9c-a4c3f0a9aeba | True | 2019-10-07T18:00:00.0 | 57 |  | 6 | 2654 |  |  |  | 2655 777600 FS | True | 2492 777600 SS | 18201600 |  |  |  |
| 2019-10-31T14:00:00.0 | ed | B2 Tie Beam | 1.1.16.3.6.2 | AS_SOON_AS_POSSIBLE | 18201600 | 500 | 777600 | 777600 | 2019-10-31T14:00:00.0 | 2019-11-23T09:00:00.0 | 2022-02-05T07:00:00.0 | 2022-03-01T15:00:00.0 | 2655 |  | 2018-06-11T22:55:00.0 | 1.1.16.3.6.2 |  | PRORATED | True | True | 18201600 | 35ef78d1-fd4c-ec11-bf9c-a4c3f0a9aeba | True | 2019-11-23T09:00:00.0 | 58 |  | 6 | 2654 |  |  |  |  | True | 2656 777600 FS | 18201600 | 18201600 |  |  |
| 2019-12-12T14:00:00.0 | ed | Basement - L2 Structure | 1.1.16.4 | AS_SOON_AS_POSSIBLE |  | 500 | 5313600 | 5313600 | 2019-12-12T14:00:00.0 | 2020-05-23T16:00:00.0 | 2019-12-12T14:00:00.0 | 2020-05-23T16:00:00.0 | 2363 | True | 2017-10-25T14:53:00.0 | 1.1.16.4 | FIXED_DURATION | PRORATED | True | True |  | dcee78d1-fd4c-ec11-bf9c-a4c3f0a9aeba | True | 2020-05-23T16:00:00.0 | 59 | True | 4 | 2483 |  | True |  |  |  |  |  |  |  |  |
| 2019-12-12T14:00:00.0 | ed | Basement 3 | 1.1.16.4.1 | AS_SOON_AS_POSSIBLE |  | 500 | 4104000 | 4104000 | 2019-12-12T14:00:00.0 | 2020-04-16T09:00:00.0 | 2019-12-12T14:00:00.0 | 2020-04-16T09:00:00.0 | 1423 |  | 2015-07-10T14:48:00.0 | 1.1.16.4.1 |  | PRORATED | True | True |  | 9bee78d1-fd4c-ec11-bf9c-a4c3f0a9aeba | True | 2020-04-16T09:00:00.0 | 60 |  | 5 | 2363 |  | True |  | 2653 777600 SS | True | 1402 FS, 1062 FS, 2652 FS, 2492 -518400 FS |  |  |  | 7800m2, 45m2/d+10% |
| 2020-01-07T09:00:00.0 | ed | Basement 2 | 1.1.16.4.2 | AS_SOON_AS_POSSIBLE |  | 500 | 3888000 | 3888000 | 2020-01-07T09:00:00.0 | 2020-05-04T11:00:00.0 | 2020-01-07T09:00:00.0 | 2020-05-04T11:00:00.0 | 2653 |  | 2018-06-11T22:54:00.0 | 1.1.16.4.2 |  | PRORATED | True | True |  | 33ef78d1-fd4c-ec11-bf9c-a4c3f0a9aeba | True | 2020-05-04T11:00:00.0 | 61 |  | 5 | 2363 |  | True |  | 2278 777600 SS | True | 1423 777600 SS |  |  |  | 45m2/d+5% |
| 2020-01-29T17:00:00.0 | ed | Basement 1 | 1.1.16.4.3 | AS_SOON_AS_POSSIBLE |  | 500 | 3499200 | 3499200 | 2020-01-29T17:00:00.0 | 2020-05-15T09:00:00.0 | 2020-01-29T17:00:00.0 | 2020-05-15T09:00:00.0 | 2278 |  | 2017-10-09T16:14:00.0 | 1.1.16.4.3 |  | PRORATED | True | True |  | ccee78d1-fd4c-ec11-bf9c-a4c3f0a9aeba | True | 2020-05-15T09:00:00.0 | 62 |  | 5 | 2363 |  | True |  | 2586 518400 SS, 2667 FS, 2661 FS | True | 2653 777600 SS |  |  |  | 50m2/d+5% |
| 2020-02-14T18:00:00.0 | ed | Level 1 | 1.1.16.4.4 | AS_SOON_AS_POSSIBLE |  | 500 | 2678400 | 2678400 | 2020-02-14T18:00:00.0 | 2020-05-06T14:00:00.0 | 2020-02-14T18:00:00.0 | 2020-05-06T14:00:00.0 | 2586 |  | 2018-03-15T17:39:00.0 | 1.1.16.4.4 |  | PRORATED | True | True |  | 01ef78d1-fd4c-ec11-bf9c-a4c3f0a9aeba | True | 2020-05-06T14:00:00.0 | 63 |  | 5 | 2363 |  | True |  | 2328 518400 SS, 2299 2073600 SS, 1580 1036800 FS | True | 2278 518400 SS, 2382 FS |  |  |  | 55m2/d+10% |
| 2020-03-02T07:00:00.0 | ed | Level 2 - Transfer & High Floor | 1.1.16.4.5 | AS_SOON_AS_POSSIBLE |  | 500 | 2721600 | 2721600 | 2020-03-02T07:00:00.0 | 2020-05-23T16:00:00.0 | 2020-03-02T07:00:00.0 | 2020-05-23T16:00:00.0 | 2328 |  | 2017-10-25T11:48:00.0 | 1.1.16.4.5 |  | PRORATED | True | True |  | dbee78d1-fd4c-ec11-bf9c-a4c3f0a9aeba | True | 2020-05-23T16:00:00.0 | 64 |  | 5 | 2363 |  | True |  | 1427 1944000 SS, 2121 FS, 2589 FS, 1580 FS | True | 2586 518400 SS |  |  |  |  |
| 2020-04-29T08:00:00.0 | ed | Super Structure | 1.1.16.5 | AS_SOON_AS_POSSIBLE | 518400 | 500 | 14040000 | 14040000 | 2020-04-29T08:00:00.0 | 2021-06-29T15:00:00.0 | 2020-05-23T16:00:00.0 | 2021-08-14T17:00:00.0 | 2487 | True | 2017-10-31T15:23:00.0 | 1.1.16.5 | FIXED_DURATION | PRORATED | True | True | 518400 | edee78d1-fd4c-ec11-bf9c-a4c3f0a9aeba | True | 2021-06-29T15:00:00.0 | 65 | True | 4 | 2483 |  |  |  |  |  |  | 1008000 | 518400 |  |  |
| 2020-04-29T08:00:00.0 | ed | Blk 1 - 26 Modules per level | 1.1.16.5.1 | AS_SOON_AS_POSSIBLE | 662400 | 500 | 13262400 | 13262400 | 2020-04-29T08:00:00.0 | 2021-06-05T19:00:00.0 | 2020-05-30T09:00:00.0 | 2021-08-14T17:00:00.0 | 2413 | True | 2017-10-28T10:05:00.0 | 1.1.16.5.1 | FIXED_DURATION | PRORATED | True | True | 662400 | e3ee78d1-fd4c-ec11-bf9c-a4c3f0a9aeba | True | 2021-06-05T19:00:00.0 | 66 | True | 5 | 2487 |  |  |  |  |  |  | 1526400 | 662400 |  |  |
| 2020-04-29T08:00:00.0 | ed | Level 2 (Learning Curve) | 1.1.16.5.1.1 | AS_SOON_AS_POSSIBLE | 662400 | 500 | 777600 | 777600 | 2020-04-29T08:00:00.0 | 2020-05-23T16:00:00.0 | 2020-05-30T09:00:00.0 | 2020-06-22T17:00:00.0 | 1427 |  | 2015-07-10T14:48:00.0 | 1.1.16.5.1.1 |  | PRORATED | True | True | 662400 | 9cee78d1-fd4c-ec11-bf9c-a4c3f0a9aeba | True | 2020-05-23T16:00:00.0 | 67 |  | 6 | 2413 |  |  |  | 2608 FS, 2243 SS | True | 2328 1944000 SS, 2266 FS | 662400 |  |  |  |
| 2020-05-23T16:00:00.0 | ed | Level 3 (Learning Curve) | 1.1.16.5.1.2 | AS_SOON_AS_POSSIBLE | 1526400 | 500 | 604800 | 604800 | 2020-05-23T16:00:00.0 | 2020-06-10T19:00:00.0 | 2020-07-31T14:00:00.0 | 2020-08-18T17:00:00.0 | 2608 |  | 2018-03-19T18:21:00.0 | 1.1.16.5.1.2 |  | PRORATED | True | True | 1526400 | 0def78d1-fd4c-ec11-bf9c-a4c3f0a9aeba | True | 2020-06-10T19:00:00.0 | 68 |  | 6 | 2413 |  |  |  | 2609 FS | True | 1427 FS | 1526400 |  |  |  |
| 2020-06-11T07:00:00.0 | ed | Level 4 (Learning Curve) | 1.1.16.5.1.3 | AS_SOON_AS_POSSIBLE | 921600 | 500 | 432000 | 432000 | 2020-06-11T07:00:00.0 | 2020-06-23T18:00:00.0 | 2020-07-22T18:00:00.0 | 2020-08-04T17:00:00.0 | 2609 |  | 2018-03-19T18:21:00.0 | 1.1.16.5.1.3 |  | PRORATED | True | True | 921600 | 0eef78d1-fd4c-ec11-bf9c-a4c3f0a9aeba | True | 2020-06-23T18:00:00.0 | 69 |  | 6 | 2413 |  |  |  | 1428 FS | True | 2608 FS | 921600 |  |  |  |

| start | leveling_delay_units | name | wbs | constraint_type | total_slack | priority | duration | remaining_duration | early_start | early_finish | late_start | late_finish | unique_id | summary | created | outline_number | type | fixed_cost_accrual | leveling_can_split | level_assignments | start_slack | guid | active | finish | id | rollup | outline_level | parent_task_unique_id | critical | successors | effort_driven | predecessors | finish_slack | text1 |
| --- | --- | --- | --- | --- | --- | --- | --- | --- | --- | --- | --- | --- | --- | --- | --- | --- | --- | --- | --- | --- | --- | --- | --- | --- | --- | --- | --- | --- | --- | --- | --- | --- | --- | --- |
| 2020-06-23T18:00:00.0 | ed | Level 5 | 1.1.16.5.1.4 | AS_SOON_AS_POSSIBLE | 1526400 | 500 | 302400 | 302400 | 2020-06-23T18:00:00.0 | 2020-07-02T14:00:00.0 | 2020-08-31T16:00:00.0 | 2020-09-09T11:00:00.0 | 1428 |  | 2015-07-10T14:48:00.0 | 1.1.16.5.1.4 |  | PRORATED | True | True | 1526400 | 9dee78d1-fd4c-ec11-bf9c-a4c3f0a9aeba | True | 2020-07-02T14:00:00.0 | 70 |  | 6 | 2413 |  | 1429 FS | True | 2609 FS | 1526400 |  |
| 2020-07-02T14:00:00.0 | ed | Level 6 | 1.1.16.5.1.5 | AS_SOON_AS_POSSIBLE | 1526400 | 500 | 345600 | 345600 | 2020-07-02T14:00:00.0 | 2020-07-14T10:00:00.0 | 2020-09-09T11:00:00.0 | 2020-09-21T08:00:00.0 | 1429 |  | 2015-07-10T14:48:00.0 | 1.1.16.5.1.5 |  | PRORATED | True | True | 1526400 | 9eee78d1-fd4c-ec11-bf9c-a4c3f0a9aeba | True | 2020-07-14T10:00:00.0 | 71 |  | 6 | 2413 |  | 1430 FS, 1935 FS | True | 1428 FS | 1526400 | + 2d |
| 2020-07-14T10:00:00.0 | ed | Level 7 | 1.1.16.5.1.6 | AS_SOON_AS_POSSIBLE | 1526400 | 500 | 302400 | 302400 | 2020-07-14T10:00:00.0 | 2020-07-22T18:00:00.0 | 2020-09-21T08:00:00.0 | 2020-09-29T16:00:00.0 | 1430 |  | 2016-08-04T11:46:00.0 | 1.1.16.5.1.6 |  | PRORATED | True | True | 1526400 | 9fee78d1-fd4c-ec11-bf9c-a4c3f0a9aeba | True | 2020-07-22T18:00:00.0 | 72 |  | 6 | 2413 |  | 1431 FS | True | 1429 FS | 1526400 |  |
| 2020-07-22T18:00:00.0 | ed | Level 8 | 1.1.16.5.1.7 | AS_SOON_AS_POSSIBLE | 1526400 | 500 | 345600 | 345600 | 2020-07-22T18:00:00.0 | 2020-08-01T15:00:00.0 | 2020-09-29T16:00:00.0 | 2020-10-09T12:00:00.0 | 1431 |  | 2016-08-04T11:46:00.0 | 1.1.16.5.1.7 |  | PRORATED | True | True | 1526400 | a0ee78d1-fd4c-ec11-bf9c-a4c3f0a9aeba | True | 2020-08-01T15:00:00.0 | 73 |  | 6 | 2413 |  | 1432 FS | True | 1430 FS | 1526400 |  |
| 2020-08-01T15:00:00.0 | ed | Level 9 | 1.1.16.5.1.8 | AS_SOON_AS_POSSIBLE | 921600 | 500 | 302400 | 302400 | 2020-08-01T15:00:00.0 | 2020-08-11T10:00:00.0 | 2020-09-11T14:00:00.0 | 2020-09-22T09:00:00.0 | 1432 |  | 2016-08-04T11:46:00.0 | 1.1.16.5.1.8 |  | PRORATED | True | True | 921600 | a1ee78d1-fd4c-ec11-bf9c-a4c3f0a9aeba | True | 2020-08-11T10:00:00.0 | 74 |  | 6 | 2413 |  | 1433 FS | True | 1431 FS | 921600 |  |
| 2020-08-11T10:00:00.0 | ed | Level 10 | 1.1.16.5.1.9 | AS_SOON_AS_POSSIBLE | 1526400 | 500 | 345600 | 345600 | 2020-08-11T10:00:00.0 | 2020-08-20T19:00:00.0 | 2020-10-19T08:00:00.0 | 2020-10-28T17:00:00.0 | 1433 |  | 2016-08-04T11:46:00.0 | 1.1.16.5.1.9 |  | PRORATED | True | True | 1526400 | a2ee78d1-fd4c-ec11-bf9c-a4c3f0a9aeba | True | 2020-08-20T19:00:00.0 | 75 |  | 6 | 2413 |  | 1434 FS | True | 1432 FS | 1526400 |  |
| 2020-08-21T07:00:00.0 | ed | Level 11 | 1.1.16.5.1.10 | AS_SOON_AS_POSSIBLE | 921600 | 500 | 302400 | 302400 | 2020-08-21T07:00:00.0 | 2020-08-29T15:00:00.0 | 2020-10-01T18:00:00.0 | 2020-10-10T14:00:00.0 | 1434 |  | 2016-08-04T11:46:00.0 | 1.1.16.5.1.10 |  | PRORATED | True | True | 921600 | a3ee78d1-fd4c-ec11-bf9c-a4c3f0a9aeba | True | 2020-08-29T15:00:00.0 | 76 |  | 6 | 2413 |  | 1435 FS | True | 1433 FS | 921600 |  |
| 2020-08-29T15:00:00.0 | ed | Level 12 | 1.1.16.5.1.11 | AS_SOON_AS_POSSIBLE | 921600 | 500 | 345600 | 345600 | 2020-08-29T15:00:00.0 | 2020-09-09T11:00:00.0 | 2020-10-10T14:00:00.0 | 2020-10-21T10:00:00.0 | 1435 |  | 2016-08-04T11:46:00.0 | 1.1.16.5.1.11 |  | PRORATED | True | True | 921600 | a4ee78d1-fd4c-ec11-bf9c-a4c3f0a9aeba | True | 2020-09-09T11:00:00.0 | 77 |  | 6 | 2413 |  | 1643 FS | True | 1434 FS | 921600 | + 2d |
| 2020-09-09T11:00:00.0 | ed | Level 13 | 1.1.16.5.1.12 | AS_SOON_AS_POSSIBLE | 1526400 | 500 | 302400 | 302400 | 2020-09-09T11:00:00.0 | 2020-09-18T19:00:00.0 | 2020-11-18T09:00:00.0 | 2020-11-26T17:00:00.0 | 1643 |  | 2016-11-10T17:34:00.0 | 1.1.16.5.1.12 |  | PRORATED | True | True | 1526400 | a8ee78d1-fd4c-ec11-bf9c-a4c3f0a9aeba | True | 2020-09-18T19:00:00.0 | 78 |  | 6 | 2413 |  | 1644 FS | True | 1435 FS | 1526400 |  |
| 2020-09-19T07:00:00.0 | ed | Level 14 | 1.1.16.5.1.13 | AS_SOON_AS_POSSIBLE | 921600 | 500 | 345600 | 345600 | 2020-09-19T07:00:00.0 | 2020-09-29T16:00:00.0 | 2020-10-30T18:00:00.0 | 2020-11-10T15:00:00.0 | 1644 |  | 2016-11-10T17:34:00.0 | 1.1.16.5.1.13 |  | PRORATED | True | True | 921600 | a9ee78d1-fd4c-ec11-bf9c-a4c3f0a9aeba | True | 2020-09-29T16:00:00.0 | 79 |  | 6 | 2413 |  | 1645 FS | True | 1643 FS | 921600 |  |
| 2020-09-29T16:00:00.0 | ed | Level 15 | 1.1.16.5.1.14 | AS_SOON_AS_POSSIBLE | 1526400 | 500 | 302400 | 302400 | 2020-09-29T16:00:00.0 | 2020-10-08T11:00:00.0 | 2020-12-07T14:00:00.0 | 2020-12-16T09:00:00.0 | 1645 |  | 2016-11-10T17:34:00.0 | 1.1.16.5.1.14 |  | PRORATED | True | True | 1526400 | aaee78d1-fd4c-ec11-bf9c-a4c3f0a9aeba | True | 2020-10-08T11:00:00.0 | 80 |  | 6 | 2413 |  | 2567 FS | True | 1644 FS | 1526400 |  |
| 2020-10-08T11:00:00.0 | ed | Level 16 | 1.1.16.5.1.15 | AS_SOON_AS_POSSIBLE | 1526400 | 500 | 345600 | 345600 | 2020-10-08T11:00:00.0 | 2020-10-19T08:00:00.0 | 2020-12-16T09:00:00.0 | 2020-12-26T18:00:00.0 | 2567 |  | 2018-03-15T15:07:00.0 | 1.1.16.5.1.15 |  | PRORATED | True | True | 1526400 | f2ee78d1-fd4c-ec11-bf9c-a4c3f0a9aeba | True | 2020-10-19T08:00:00.0 | 81 |  | 6 | 2413 |  | 2568 FS | True | 1645 FS | 1526400 |  |
| 2020-10-19T08:00:00.0 | ed | Level 17 | 1.1.16.5.1.16 | AS_SOON_AS_POSSIBLE | 1526400 | 500 | 302400 | 302400 | 2020-10-19T08:00:00.0 | 2020-10-27T16:00:00.0 | 2020-12-26T18:00:00.0 | 2021-01-06T14:00:00.0 | 2568 |  | 2018-03-15T15:07:00.0 | 1.1.16.5.1.16 |  | PRORATED | True | True | 1526400 | f3ee78d1-fd4c-ec11-bf9c-a4c3f0a9aeba | True | 2020-10-27T16:00:00.0 | 82 |  | 6 | 2413 |  | 2570 FS | True | 2567 FS | 1526400 |  |
| 2020-10-27T16:00:00.0 | ed | Level 18 | 1.1.16.5.1.17 | AS_SOON_AS_POSSIBLE | 1526400 | 500 | 345600 | 345600 | 2020-10-27T16:00:00.0 | 2020-11-07T12:00:00.0 | 2021-01-06T14:00:00.0 | 2021-01-16T10:00:00.0 | 2570 |  | 2018-03-15T15:08:00.0 | 1.1.16.5.1.17 |  | PRORATED | True | True | 1526400 | f5ee78d1-fd4c-ec11-bf9c-a4c3f0a9aeba | True | 2020-11-07T12:00:00.0 | 83 |  | 6 | 2413 |  | 2571 FS | True | 2568 FS | 1526400 | + 2d |
| 2020-11-07T13:00:00.0 | ed | Level 19 | 1.1.16.5.1.18 | AS_SOON_AS_POSSIBLE | 921600 | 500 | 302400 | 302400 | 2020-11-07T13:00:00.0 | 2020-11-17T08:00:00.0 | 2020-12-18T11:00:00.0 | 2020-12-28T19:00:00.0 | 2571 |  | 2018-03-15T15:08:00.0 | 1.1.16.5.1.18 |  | PRORATED | True | True | 921600 | f6ee78d1-fd4c-ec11-bf9c-a4c3f0a9aeba | True | 2020-11-17T08:00:00.0 | 84 |  | 6 | 2413 |  | 2572 FS | True | 2570 FS | 921600 |  |
| 2020-11-17T08:00:00.0 | ed | Level 20 | 1.1.16.5.1.19 | AS_SOON_AS_POSSIBLE | 1526400 | 500 | 345600 | 345600 | 2020-11-17T08:00:00.0 | 2020-11-26T17:00:00.0 | 2021-01-25T18:00:00.0 | 2021-02-04T15:00:00.0 | 2572 |  | 2018-03-15T15:08:00.0 | 1.1.16.5.1.19 |  | PRORATED | True | True | 1526400 | f7ee78d1-fd4c-ec11-bf9c-a4c3f0a9aeba | True | 2020-11-26T17:00:00.0 | 85 |  | 6 | 2413 |  | 2573 FS | True | 2571 FS | 1526400 |  |
| 2020-11-26T17:00:00.0 | ed | Level 21 | 1.1.16.5.1.20 | AS_SOON_AS_POSSIBLE | 1526400 | 500 | 302400 | 302400 | 2020-11-26T17:00:00.0 | 2020-12-05T12:00:00.0 | 2021-02-04T15:00:00.0 | 2021-02-15T10:00:00.0 | 2573 |  | 2018-03-15T15:08:00.0 | 1.1.16.5.1.20 |  | PRORATED | True | True | 1526400 | f8ee78d1-fd4c-ec11-bf9c-a4c3f0a9aeba | True | 2020-12-05T12:00:00.0 | 86 |  | 6 | 2413 |  | 2569 FS | True | 2572 FS | 1526400 |  |
| 2020-12-05T13:00:00.0 | ed | Level 22 | 1.1.16.5.1.21 | AS_SOON_AS_POSSIBLE | 921600 | 500 | 345600 | 345600 | 2020-12-05T13:00:00.0 | 2020-12-16T09:00:00.0 | 2021-01-18T11:00:00.0 | 2021-01-28T08:00:00.0 | 2569 |  | 2018-03-15T15:08:00.0 | 1.1.16.5.1.21 |  | PRORATED | True | True | 921600 | f4ee78d1-fd4c-ec11-bf9c-a4c3f0a9aeba | True | 2020-12-16T09:00:00.0 | 87 |  | 6 | 2413 |  | 2574 FS | True | 2573 FS | 921600 |  |
| 2020-12-16T09:00:00.0 | ed | Level 23 | 1.1.16.5.1.22 | AS_SOON_AS_POSSIBLE | 1526400 | 500 | 302400 | 302400 | 2020-12-16T09:00:00.0 | 2020-12-24T17:00:00.0 | 2021-02-25T07:00:00.0 | 2021-03-05T15:00:00.0 | 2574 |  | 2018-03-15T15:08:00.0 | 1.1.16.5.1.22 |  | PRORATED | True | True | 1526400 | f9ee78d1-fd4c-ec11-bf9c-a4c3f0a9aeba | True | 2020-12-24T17:00:00.0 | 88 |  | 6 | 2413 |  | 2610 FS | True | 2569 FS | 1526400 |  |
| 2020-12-24T17:00:00.0 | ed | Level 24 | 1.1.16.5.1.23 | AS_SOON_AS_POSSIBLE | 1526400 | 500 | 345600 | 345600 | 2020-12-24T17:00:00.0 | 2021-01-06T14:00:00.0 | 2021-03-05T15:00:00.0 | 2021-03-16T11:00:00.0 | 2610 |  | 2018-03-19T18:23:00.0 | 1.1.16.5.1.23 |  | PRORATED | True | True | 1526400 | 0fef78d1-fd4c-ec11-bf9c-a4c3f0a9aeba | True | 2021-01-06T14:00:00.0 | 89 |  | 6 | 2413 |  | 2611 FS | True | 2574 FS | 1526400 |  |
| 2021-01-06T14:00:00.0 | ed | Level 25 | 1.1.16.5.1.24 | AS_SOON_AS_POSSIBLE | 1526400 | 500 | 302400 | 302400 | 2021-01-06T14:00:00.0 | 2021-01-15T09:00:00.0 | 2021-03-16T11:00:00.0 | 2021-03-24T19:00:00.0 | 2611 |  | 2018-03-19T18:23:00.0 | 1.1.16.5.1.24 |  | PRORATED | True | True | 1526400 | 10ef78d1-fd4c-ec11-bf9c-a4c3f0a9aeba | True | 2021-01-15T09:00:00.0 | 90 |  | 6 | 2413 |  | 2612 FS | True | 2610 FS | 1526400 |  |
| 2021-01-15T09:00:00.0 | ed | Level 26 | 1.1.16.5.1.25 | AS_SOON_AS_POSSIBLE | 1526400 | 500 | 345600 | 345600 | 2021-01-15T09:00:00.0 | 2021-01-25T18:00:00.0 | 2021-03-25T07:00:00.0 | 2021-04-05T16:00:00.0 | 2612 |  | 2018-03-19T18:23:00.0 | 1.1.16.5.1.25 |  | PRORATED | True | True | 1526400 | 11ef78d1-fd4c-ec11-bf9c-a4c3f0a9aeba | True | 2021-01-25T18:00:00.0 | 91 |  | 6 | 2413 |  | 2613 FS | True | 2611 FS | 1526400 | + 6d |
| 2021-01-25T18:00:00.0 | ed | Level 27 | 1.1.16.5.1.26 | AS_SOON_AS_POSSIBLE | 1526400 | 500 | 302400 | 302400 | 2021-01-25T18:00:00.0 | 2021-02-03T14:00:00.0 | 2021-04-05T16:00:00.0 | 2021-04-14T11:00:00.0 | 2613 |  | 2018-03-19T18:23:00.0 | 1.1.16.5.1.26 |  | PRORATED | True | True | 1526400 | 12ef78d1-fd4c-ec11-bf9c-a4c3f0a9aeba | True | 2021-02-03T14:00:00.0 | 92 |  | 6 | 2413 |  | 2614 FS | True | 2612 FS | 1526400 |  |
| 2021-02-03T14:00:00.0 | ed | Level 28 | 1.1.16.5.1.27 | AS_SOON_AS_POSSIBLE | 1526400 | 500 | 345600 | 345600 | 2021-02-03T14:00:00.0 | 2021-02-15T10:00:00.0 | 2021-04-14T11:00:00.0 | 2021-04-24T08:00:00.0 | 2614 |  | 2018-03-19T18:23:00.0 | 1.1.16.5.1.27 |  | PRORATED | True | True | 1526400 | 13ef78d1-fd4c-ec11-bf9c-a4c3f0a9aeba | True | 2021-02-15T10:00:00.0 | 93 |  | 6 | 2413 |  | 2615 FS | True | 2613 FS | 1526400 |  |
| 2021-02-15T10:00:00.0 | ed | Level 29 | 1.1.16.5.1.28 | AS_SOON_AS_POSSIBLE | 1526400 | 500 | 302400 | 302400 | 2021-02-15T10:00:00.0 | 2021-02-23T18:00:00.0 | 2021-04-24T08:00:00.0 | 2021-05-04T16:00:00.0 | 2615 |  | 2018-03-19T18:23:00.0 | 1.1.16.5.1.28 |  | PRORATED | True | True | 1526400 | 14ef78d1-fd4c-ec11-bf9c-a4c3f0a9aeba | True | 2021-02-23T18:00:00.0 | 94 |  | 6 | 2413 |  | 2616 FS | True | 2614 FS | 1526400 |  |
| 2021-02-23T18:00:00.0 | ed | Level 30 | 1.1.16.5.1.29 | AS_SOON_AS_POSSIBLE | 1526400 | 500 | 345600 | 345600 | 2021-02-23T18:00:00.0 | 2021-03-05T15:00:00.0 | 2021-05-04T16:00:00.0 | 2021-05-14T12:00:00.0 | 2616 |  | 2018-03-19T18:23:00.0 | 1.1.16.5.1.29 |  | PRORATED | True | True | 1526400 | 15ef78d1-fd4c-ec11-bf9c-a4c3f0a9aeba | True | 2021-03-05T15:00:00.0 | 95 |  | 6 | 2413 |  | 2617 FS | True | 2615 FS | 1526400 | + 2d |
| 2021-03-05T15:00:00.0 | ed | Level 31 | 1.1.16.5.1.30 | AS_SOON_AS_POSSIBLE | 921600 | 500 | 302400 | 302400 | 2021-03-05T15:00:00.0 | 2021-03-15T10:00:00.0 | 2021-04-16T14:00:00.0 | 2021-04-26T09:00:00.0 | 2617 |  | 2018-03-19T18:23:00.0 | 1.1.16.5.1.30 |  | PRORATED | True | True | 921600 | 16ef78d1-fd4c-ec11-bf9c-a4c3f0a9aeba | True | 2021-03-15T10:00:00.0 | 96 |  | 6 | 2413 |  | 2618 FS | True | 2616 FS | 921600 |  |
| 2021-03-15T10:00:00.0 | ed | Level 32 | 1.1.16.5.1.31 | AS_SOON_AS_POSSIBLE | 1526400 | 500 | 345600 | 345600 | 2021-03-15T10:00:00.0 | 2021-03-24T19:00:00.0 | 2021-05-25T08:00:00.0 | 2021-06-03T17:00:00.0 | 2618 |  | 2018-03-19T18:23:00.0 | 1.1.16.5.1.31 |  | PRORATED | True | True | 1526400 | 17ef78d1-fd4c-ec11-bf9c-a4c3f0a9aeba | True | 2021-03-24T19:00:00.0 | 97 |  | 6 | 2413 |  | 2619 FS | True | 2617 FS | 1526400 |  |
| 2021-03-25T07:00:00.0 | ed | Level 33 | 1.1.16.5.1.32 | AS_SOON_AS_POSSIBLE | 921600 | 500 | 302400 | 302400 | 2021-03-25T07:00:00.0 | 2021-04-03T15:00:00.0 | 2021-05-06T18:00:00.0 | 2021-05-15T14:00:00.0 | 2619 |  | 2018-03-19T18:23:00.0 | 1.1.16.5.1.32 |  | PRORATED | True | True | 921600 | 18ef78d1-fd4c-ec11-bf9c-a4c3f0a9aeba | True | 2021-04-03T15:00:00.0 | 98 |  | 6 | 2413 |  | 2620 FS | True | 2618 FS | 921600 |  |
| 2021-04-03T15:00:00.0 | ed | Level 34 | 1.1.16.5.1.33 | AS_SOON_AS_POSSIBLE | 921600 | 500 | 345600 | 345600 | 2021-04-03T15:00:00.0 | 2021-04-14T11:00:00.0 | 2021-05-15T14:00:00.0 | 2021-05-27T10:00:00.0 | 2620 |  | 2018-03-19T18:23:00.0 | 1.1.16.5.1.33 |  | PRORATED | True | True | 921600 | 19ef78d1-fd4c-ec11-bf9c-a4c3f0a9aeba | True | 2021-04-14T11:00:00.0 | 99 |  | 6 | 2413 |  | 2621 FS | True | 2619 FS | 921600 |  |
| 2021-04-14T11:00:00.0 | ed | Level 35 | 1.1.16.5.1.34 | AS_SOON_AS_POSSIBLE | 1526400 | 500 | 302400 | 302400 | 2021-04-14T11:00:00.0 | 2021-04-22T19:00:00.0 | 2021-06-23T09:00:00.0 | 2021-07-01T17:00:00.0 | 2621 |  | 2018-03-19T18:23:00.0 | 1.1.16.5.1.34 |  | PRORATED | True | True | 1526400 | 1aef78d1-fd4c-ec11-bf9c-a4c3f0a9aeba | True | 2021-04-22T19:00:00.0 | 100 |  | 6 | 2413 |  | 2622 FS | True | 2620 FS | 1526400 |  |
| 2021-04-23T07:00:00.0 | ed | Level 36 | 1.1.16.5.1.35 | AS_SOON_AS_POSSIBLE | 921600 | 500 | 345600 | 345600 | 2021-04-23T07:00:00.0 | 2021-05-04T16:00:00.0 | 2021-06-04T18:00:00.0 | 2021-06-15T15:00:00.0 | 2622 |  | 2018-03-19T18:23:00.0 | 1.1.16.5.1.35 |  | PRORATED | True | True | 921600 | 1bef78d1-fd4c-ec11-bf9c-a4c3f0a9aeba | True | 2021-05-04T16:00:00.0 | 101 |  | 6 | 2413 |  | 1436 FS | True | 2621 FS | 921600 | + 6d |
| 2021-05-04T16:00:00.0 | ed | Lower Roof | 1.1.16.5.1.36 | AS_SOON_AS_POSSIBLE | 1526400 | 500 | 648000 | 648000 | 2021-05-04T16:00:00.0 | 2021-05-25T08:00:00.0 | 2021-07-13T14:00:00.0 | 2021-07-31T18:00:00.0 | 1436 |  | 2016-08-04T11:46:00.0 | 1.1.16.5.1.36 |  | PRORATED | True | True | 1526400 | a5ee78d1-fd4c-ec11-bf9c-a4c3f0a9aeba | True | 2021-05-25T08:00:00.0 | 102 |  | 6 | 2413 |  | 1437 FS | True | 2479 FS, 2622 FS | 1526400 |  |
| 2021-05-25T08:00:00.0 | ed | Upper Roof | 1.1.16.5.1.37 | AS_SOON_AS_POSSIBLE | 1526400 | 500 | 432000 | 432000 | 2021-05-25T08:00:00.0 | 2021-06-05T19:00:00.0 | 2021-07-31T18:00:00.0 | 2021-08-14T17:00:00.0 | 1437 |  | 2016-08-04T11:46:00.0 | 1.1.16.5.1.37 |  | PRORATED | True | True | 1526400 | a6ee78d1-fd4c-ec11-bf9c-a4c3f0a9aeba | True | 2021-06-05T19:00:00.0 | 103 |  | 6 | 2413 |  | 1718 FS, 2649 FS | True | 1436 FS | 1526400 |  |
| 2020-05-23T16:00:00.0 | ed | Blk 2 - 27 modules per level | 1.1.16.5.2 | AS_SOON_AS_POSSIBLE | 604800 | 500 | 13262400 | 13262400 | 2020-05-23T16:00:00.0 | 2021-06-29T15:00:00.0 | 2020-05-23T16:00:00.0 | 2021-07-27T14:00:00.0 | 2470 | True | 2017-10-30T17:22:00.0 | 1.1.16.5.2 | FIXED_DURATION | PRORATED | True | True |  | e4ee78d1-fd4c-ec11-bf9c-a4c3f0a9aeba | True | 2021-06-29T15:00:00.0 | 104 | True | 5 | 2487 |  |  |  |  | 604800 |  |
| 2020-05-23T16:00:00.0 | ed | Level 2 (Learning Curve) | 1.1.16.5.2.1 | AS_SOON_AS_POSSIBLE |  | 500 | 777600 | 777600 | 2020-05-23T16:00:00.0 | 2020-06-16T11:00:00.0 | 2020-05-23T16:00:00.0 | 2020-06-16T11:00:00.0 | 2121 |  | 2015-07-10T14:48:00.0 | 1.1.16.5.2.1 |  | PRORATED | True | True |  | b7ee78d1-fd4c-ec11-bf9c-a4c3f0a9aeba | True | 2020-06-16T11:00:00.0 | 105 |  | 6 | 2470 | True | 2122 FS | True | 2328 FS, 2268 FS |  |  |
| 2020-06-16T11:00:00.0 | ed | Level 3 (Learning Curve) | 1.1.16.5.2.2 | AS_SOON_AS_POSSIBLE |  | 500 | 604800 | 604800 | 2020-06-16T11:00:00.0 | 2020-07-03T15:00:00.0 | 2020-06-16T11:00:00.0 | 2020-07-03T15:00:00.0 | 2122 |  | 2015-07-10T14:48:00.0 | 1.1.16.5.2.2 |  | PRORATED | True | True |  | b8ee78d1-fd4c-ec11-bf9c-a4c3f0a9aeba | True | 2020-07-03T15:00:00.0 | 106 |  | 6 | 2470 | True | 2123 FS | True | 2121 FS |  |  |
| 2020-07-03T15:00:00.0 | ed | Level 4 (Learning Curve) | 1.1.16.5.2.3 | AS_SOON_AS_POSSIBLE |  | 500 | 432000 | 432000 | 2020-07-03T15:00:00.0 | 2020-07-17T14:00:00.0 | 2020-07-03T15:00:00.0 | 2020-07-17T14:00:00.0 | 2123 |  | 2016-08-04T11:46:00.0 | 1.1.16.5.2.3 |  | PRORATED | True | True |  | b9ee78d1-fd4c-ec11-bf9c-a4c3f0a9aeba | True | 2020-07-17T14:00:00.0 | 107 |  | 6 | 2470 | True | 2623 FS | True | 2122 FS |  |  |
| 2020-07-17T14:00:00.0 | ed | Level 5 | 1.1.16.5.2.4 | AS_SOON_AS_POSSIBLE |  | 500 | 302400 | 302400 | 2020-07-17T14:00:00.0 | 2020-07-27T09:00:00.0 | 2020-07-17T14:00:00.0 | 2020-07-27T09:00:00.0 | 2623 |  | 2018-03-19T18:54:00.0 | 1.1.16.5.2.4 |  | PRORATED | True | True |  | 1cef78d1-fd4c-ec11-bf9c-a4c3f0a9aeba | True | 2020-07-27T09:00:00.0 | 108 |  | 6 | 2470 | True | 2624 FS | True | 2123 FS |  |  |
| 2020-07-27T09:00:00.0 | ed | Level 6 | 1.1.16.5.2.5 | AS_SOON_AS_POSSIBLE |  | 500 | 345600 | 345600 | 2020-07-27T09:00:00.0 | 2020-08-05T18:00:00.0 | 2020-07-27T09:00:00.0 | 2020-08-05T18:00:00.0 | 2624 |  | 2018-03-19T18:54:00.0 | 1.1.16.5.2.5 |  | PRORATED | True | True |  | 1def78d1-fd4c-ec11-bf9c-a4c3f0a9aeba | True | 2020-08-05T18:00:00.0 | 109 |  | 6 | 2470 | True | 2625 FS, 2298 518400 FS | True | 2623 FS |  | + 2d |
| 2020-08-05T18:00:00.0 | ed | Level 7 | 1.1.16.5.2.6 | AS_SOON_AS_POSSIBLE | 604800 | 500 | 302400 | 302400 | 2020-08-05T18:00:00.0 | 2020-08-14T14:00:00.0 | 2020-09-01T17:00:00.0 | 2020-09-10T12:00:00.0 | 2625 |  | 2018-03-19T18:54:00.0 | 1.1.16.5.2.6 |  | PRORATED | True | True | 604800 | 1eef78d1-fd4c-ec11-bf9c-a4c3f0a9aeba | True | 2020-08-14T14:00:00.0 | 110 |  | 6 | 2470 |  | 2124 FS | True | 2624 FS | 604800 |  |
| 2020-08-14T14:00:00.0 | ed | Level 8 | 1.1.16.5.2.7 | AS_SOON_AS_POSSIBLE | 604800 | 500 | 345600 | 345600 | 2020-08-14T14:00:00.0 | 2020-08-25T10:00:00.0 | 2020-09-10T13:00:00.0 | 2020-09-22T09:00:00.0 | 2124 |  | 2016-08-04T11:46:00.0 | 1.1.16.5.2.7 |  | PRORATED | True | True | 604800 | baee78d1-fd4c-ec11-bf9c-a4c3f0a9aeba | True | 2020-08-25T10:00:00.0 | 111 |  | 6 | 2470 |  | 2125 FS | True | 2625 FS | 604800 |  |
| 2020-08-25T10:00:00.0 | ed | Level 9 | 1.1.16.5.2.8 | AS_SOON_AS_POSSIBLE | 604800 | 500 | 302400 | 302400 | 2020-08-25T10:00:00.0 | 2020-09-02T18:00:00.0 | 2020-09-22T09:00:00.0 | 2020-09-30T17:00:00.0 | 2125 |  | 2016-08-04T11:46:00.0 | 1.1.16.5.2.8 |  | PRORATED | True | True | 604800 | bbee78d1-fd4c-ec11-bf9c-a4c3f0a9aeba | True | 2020-09-02T18:00:00.0 | 112 |  | 6 | 2470 |  | 2126 FS | True | 2124 FS | 604800 |  |
| 2020-09-02T18:00:00.0 | ed | Level 10 | 1.1.16.5.2.9 | AS_SOON_AS_POSSIBLE | 604800 | 500 | 345600 | 345600 | 2020-09-02T18:00:00.0 | 2020-09-14T15:00:00.0 | 2020-09-30T17:00:00.0 | 2020-10-10T14:00:00.0 | 2126 |  | 2016-08-04T11:46:00.0 | 1.1.16.5.2.9 |  | PRORATED | True | True | 604800 | bcee78d1-fd4c-ec11-bf9c-a4c3f0a9aeba | True | 2020-09-14T15:00:00.0 | 113 |  | 6 | 2470 |  | 2127 FS | True | 2125 FS | 604800 |  |
| 2020-09-14T15:00:00.0 | ed | Level 11 | 1.1.16.5.2.10 | AS_SOON_AS_POSSIBLE | 604800 | 500 | 302400 | 302400 | 2020-09-14T15:00:00.0 | 2020-09-23T10:00:00.0 | 2020-10-10T14:00:00.0 | 2020-10-20T09:00:00.0 | 2127 |  | 2016-08-04T11:46:00.0 | 1.1.16.5.2.10 |  | PRORATED | True | True | 604800 | bdee78d1-fd4c-ec11-bf9c-a4c3f0a9aeba | True | 2020-09-23T10:00:00.0 | 114 |  | 6 | 2470 |  | 2128 FS | True | 2126 FS | 604800 |  |
| 2020-09-23T10:00:00.0 | ed | Level 12 | 1.1.16.5.2.11 | AS_SOON_AS_POSSIBLE | 604800 | 500 | 345600 | 345600 | 2020-09-23T10:00:00.0 | 2020-10-02T19:00:00.0 | 2020-10-20T09:00:00.0 | 2020-10-30T18:00:00.0 | 2128 |  | 2016-08-04T11:46:00.0 | 1.1.16.5.2.11 |  | PRORATED | True | True | 604800 | beee78d1-fd4c-ec11-bf9c-a4c3f0a9aeba | True | 2020-10-02T19:00:00.0 | 115 |  | 6 | 2470 |  | 2129 FS | True | 2127 FS | 604800 | + 2d |
| 2020-10-03T07:00:00.0 | ed | Level 13 | 1.1.16.5.2.12 | AS_SOON_AS_POSSIBLE | 604800 | 500 | 302400 | 302400 | 2020-10-03T07:00:00.0 | 2020-10-12T15:00:00.0 | 2020-10-30T18:00:00.0 | 2020-11-09T14:00:00.0 | 2129 |  | 2016-11-10T17:34:00.0 | 1.1.16.5.2.12 |  | PRORATED | True | True | 604800 | bfee78d1-fd4c-ec11-bf9c-a4c3f0a9aeba | True | 2020-10-12T15:00:00.0 | 116 |  | 6 | 2470 |  | 2130 FS | True | 2128 FS | 604800 |  |
| 2020-10-12T15:00:00.0 | ed | Level 14 | 1.1.16.5.2.13 | AS_SOON_AS_POSSIBLE | 604800 | 500 | 345600 | 345600 | 2020-10-12T15:00:00.0 | 2020-10-22T11:00:00.0 | 2020-11-09T14:00:00.0 | 2020-11-19T10:00:00.0 | 2130 |  | 2016-11-10T17:34:00.0 | 1.1.16.5.2.13 |  | PRORATED | True | True | 604800 | c0ee78d1-fd4c-ec11-bf9c-a4c3f0a9aeba | True | 2020-10-22T11:00:00.0 | 117 |  | 6 | 2470 |  | 2581 FS | True | 2129 FS | 604800 |  |
| 2020-10-22T11:00:00.0 | ed | Level 15 | 1.1.16.5.2.14 | AS_SOON_AS_POSSIBLE | 604800 | 500 | 302400 | 302400 | 2020-10-22T11:00:00.0 | 2020-10-31T19:00:00.0 | 2020-11-19T10:00:00.0 | 2020-11-27T18:00:00.0 | 2581 |  | 2018-03-15T16:46:00.0 | 1.1.16.5.2.14 |  | PRORATED | True | True | 604800 | fcee78d1-fd4c-ec11-bf9c-a4c3f0a9aeba | True | 2020-10-31T19:00:00.0 | 118 |  | 6 | 2470 |  | 2582 FS | True | 2130 FS | 604800 |  |
| 2020-11-02T07:00:00.0 | ed | Level 16 | 1.1.16.5.2.15 | AS_SOON_AS_POSSIBLE | 604800 | 500 | 345600 | 345600 | 2020-11-02T07:00:00.0 | 2020-11-11T16:00:00.0 | 2020-11-27T18:00:00.0 | 2020-12-08T15:00:00.0 | 2582 |  | 2018-03-15T16:46:00.0 | 1.1.16.5.2.15 |  | PRORATED | True | True | 604800 | fdee78d1-fd4c-ec11-bf9c-a4c3f0a9aeba | True | 2020-11-11T16:00:00.0 | 119 |  | 6 | 2470 |  | 2583 FS | True | 2581 FS | 604800 |  |
| 2020-11-11T16:00:00.0 | ed | Level 17 | 1.1.16.5.2.16 | AS_SOON_AS_POSSIBLE | 604800 | 500 | 302400 | 302400 | 2020-11-11T16:00:00.0 | 2020-11-20T11:00:00.0 | 2020-12-08T15:00:00.0 | 2020-12-17T10:00:00.0 | 2583 |  | 2018-03-15T16:46:00.0 | 1.1.16.5.2.16 |  | PRORATED | True | True | 604800 | feee78d1-fd4c-ec11-bf9c-a4c3f0a9aeba | True | 2020-11-20T11:00:00.0 | 120 |  | 6 | 2470 |  | 2584 FS | True | 2582 FS | 604800 |  |
| 2020-11-20T11:00:00.0 | ed | Level 18 | 1.1.16.5.2.17 | AS_SOON_AS_POSSIBLE | 604800 | 500 | 345600 | 345600 | 2020-11-20T11:00:00.0 | 2020-12-01T08:00:00.0 | 2020-12-17T10:00:00.0 | 2020-12-28T19:00:00.0 | 2584 |  | 2018-03-15T16:46:00.0 | 1.1.16.5.2.17 |  | PRORATED | True | True | 604800 | ffee78d1-fd4c-ec11-bf9c-a4c3f0a9aeba | True | 2020-12-01T08:00:00.0 | 121 |  | 6 | 2470 |  | 2637 FS | True | 2583 FS | 604800 | + 2d |
| 2020-12-01T08:00:00.0 | ed | Level 19 | 1.1.16.5.2.18 | AS_SOON_AS_POSSIBLE | 604800 | 500 | 302400 | 302400 | 2020-12-01T08:00:00.0 | 2020-12-09T16:00:00.0 | 2020-12-29T07:00:00.0 | 2021-01-07T15:00:00.0 | 2637 |  | 2018-03-19T18:56:00.0 | 1.1.16.5.2.18 |  | PRORATED | True | True | 604800 | 25ef78d1-fd4c-ec11-bf9c-a4c3f0a9aeba | True | 2020-12-09T16:00:00.0 | 122 |  | 6 | 2470 |  | 2638 FS | True | 2584 FS | 604800 |  |
| 2020-12-09T16:00:00.0 | ed | Level 20 | 1.1.16.5.2.19 | AS_SOON_AS_POSSIBLE | 604800 | 500 | 345600 | 345600 | 2020-12-09T16:00:00.0 | 2020-12-19T12:00:00.0 | 2021-01-07T15:00:00.0 | 2021-01-18T11:00:00.0 | 2638 |  | 2018-03-19T18:56:00.0 | 1.1.16.5.2.19 |  | PRORATED | True | True | 604800 | 26ef78d1-fd4c-ec11-bf9c-a4c3f0a9aeba | True | 2020-12-19T12:00:00.0 | 123 |  | 6 | 2470 |  | 2639 FS | True | 2637 FS | 604800 |  |
| 2020-12-19T13:00:00.0 | ed | Level 21 | 1.1.16.5.2.20 | AS_SOON_AS_POSSIBLE | 604800 | 500 | 302400 | 302400 | 2020-12-19T13:00:00.0 | 2020-12-30T08:00:00.0 | 2021-01-18T11:00:00.0 | 2021-01-26T19:00:00.0 | 2639 |  | 2018-03-19T18:56:00.0 | 1.1.16.5.2.20 |  | PRORATED | True | True | 604800 | 27ef78d1-fd4c-ec11-bf9c-a4c3f0a9aeba | True | 2020-12-30T08:00:00.0 | 124 |  | 6 | 2470 |  | 2640 FS | True | 2638 FS | 604800 |  |
| 2020-12-30T08:00:00.0 | ed | Level 22 | 1.1.16.5.2.21 | AS_SOON_AS_POSSIBLE | 604800 | 500 | 345600 | 345600 | 2020-12-30T08:00:00.0 | 2021-01-09T17:00:00.0 | 2021-01-27T07:00:00.0 | 2021-02-05T16:00:00.0 | 2640 |  | 2018-03-19T18:56:00.0 | 1.1.16.5.2.21 |  | PRORATED | True | True | 604800 | 28ef78d1-fd4c-ec11-bf9c-a4c3f0a9aeba | True | 2021-01-09T17:00:00.0 | 125 |  | 6 | 2470 |  | 2641 FS | True | 2639 FS | 604800 |  |
| 2021-01-09T17:00:00.0 | ed | Level 23 | 1.1.16.5.2.22 | AS_SOON_AS_POSSIBLE | 604800 | 500 | 302400 | 302400 | 2021-01-09T17:00:00.0 | 2021-01-19T12:00:00.0 | 2021-02-05T16:00:00.0 | 2021-02-16T11:00:00.0 | 2641 |  | 2018-03-19T18:56:00.0 | 1.1.16.5.2.22 |  | PRORATED | True | True | 604800 | 29ef78d1-fd4c-ec11-bf9c-a4c3f0a9aeba | True | 2021-01-19T12:00:00.0 | 126 |  | 6 | 2470 |  | 2642 FS | True | 2640 FS | 604800 |  |
| 2021-01-19T13:00:00.0 | ed | Level 24 | 1.1.16.5.2.23 | AS_SOON_AS_POSSIBLE | 604800 | 500 | 345600 | 345600 | 2021-01-19T13:00:00.0 | 2021-01-29T09:00:00.0 | 2021-02-16T11:00:00.0 | 2021-02-26T08:00:00.0 | 2642 |  | 2018-03-19T18:56:00.0 | 1.1.16.5.2.23 |  | PRORATED | True | True | 604800 | 2aef78d1-fd4c-ec11-bf9c-a4c3f0a9aeba | True | 2021-01-29T09:00:00.0 | 127 |  | 6 | 2470 |  | 2643 FS | True | 2641 FS | 604800 |  |
| 2021-01-29T09:00:00.0 | ed | Level 25 | 1.1.16.5.2.24 | AS_SOON_AS_POSSIBLE | 604800 | 500 | 302400 | 302400 | 2021-01-29T09:00:00.0 | 2021-02-06T17:00:00.0 | 2021-02-26T08:00:00.0 | 2021-03-06T16:00:00.0 | 2643 |  | 2018-03-19T18:56:00.0 | 1.1.16.5.2.24 |  | PRORATED | True | True | 604800 | 2bef78d1-fd4c-ec11-bf9c-a4c3f0a9aeba | True | 2021-02-06T17:00:00.0 | 128 |  | 6 | 2470 |  | 2644 FS | True | 2642 FS | 604800 |  |
| 2021-02-06T17:00:00.0 | ed | Level 26 | 1.1.16.5.2.25 | AS_SOON_AS_POSSIBLE | 604800 | 500 | 345600 | 345600 | 2021-02-06T17:00:00.0 | 2021-02-18T14:00:00.0 | 2021-03-06T16:00:00.0 | 2021-03-17T12:00:00.0 | 2644 |  | 2018-03-19T18:56:00.0 | 1.1.16.5.2.25 |  | PRORATED | True | True | 604800 | 2cef78d1-fd4c-ec11-bf9c-a4c3f0a9aeba | True | 2021-02-18T14:00:00.0 | 129 |  | 6 | 2470 |  | 2645 FS | True | 2643 FS | 604800 | + 6d |
| 2021-02-18T14:00:00.0 | ed | Level 27 | 1.1.16.5.2.26 | AS_SOON_AS_POSSIBLE | 604800 | 500 | 302400 | 302400 | 2021-02-18T14:00:00.0 | 2021-02-27T09:00:00.0 | 2021-03-17T13:00:00.0 | 2021-03-27T08:00:00.0 | 2645 |  | 2018-03-19T18:56:00.0 | 1.1.16.5.2.26 |  | PRORATED | True | True | 604800 | 2def78d1-fd4c-ec11-bf9c-a4c3f0a9aeba | True | 2021-02-27T09:00:00.0 | 130 |  | 6 | 2470 |  | 2646 FS | True | 2644 FS | 604800 |  |
| 2021-02-27T09:00:00.0 | ed | Level 28 | 1.1.16.5.2.27 | AS_SOON_AS_POSSIBLE | 604800 | 500 | 345600 | 345600 | 2021-02-27T09:00:00.0 | 2021-03-09T18:00:00.0 | 2021-03-27T08:00:00.0 | 2021-04-06T17:00:00.0 | 2646 |  | 2018-03-19T18:56:00.0 | 1.1.16.5.2.27 |  | PRORATED | True | True | 604800 | 2eef78d1-fd4c-ec11-bf9c-a4c3f0a9aeba | True | 2021-03-09T18:00:00.0 | 131 |  | 6 | 2470 |  | 2647 FS | True | 2645 FS | 604800 |  |
| 2021-03-09T18:00:00.0 | ed | Level 29 | 1.1.16.5.2.28 | AS_SOON_AS_POSSIBLE | 604800 | 500 | 302400 | 302400 | 2021-03-09T18:00:00.0 | 2021-03-18T14:00:00.0 | 2021-04-06T17:00:00.0 | 2021-04-15T12:00:00.0 | 2647 |  | 2018-03-19T18:56:00.0 | 1.1.16.5.2.28 |  | PRORATED | True | True | 604800 | 2fef78d1-fd4c-ec11-bf9c-a4c3f0a9aeba | True | 2021-03-18T14:00:00.0 | 132 |  | 6 | 2470 |  | 2626 FS | True | 2646 FS | 604800 |  |
| 2021-03-18T14:00:00.0 | ed | Level 30 | 1.1.16.5.2.29 | AS_SOON_AS_POSSIBLE | 604800 | 500 | 345600 | 345600 | 2021-03-18T14:00:00.0 | 2021-03-30T10:00:00.0 | 2021-04-15T13:00:00.0 | 2021-04-26T09:00:00.0 | 2626 |  | 2018-03-19T18:56:00.0 | 1.1.16.5.2.29 |  | PRORATED | True | True | 604800 | 1fef78d1-fd4c-ec11-bf9c-a4c3f0a9aeba | True | 2021-03-30T10:00:00.0 | 133 |  | 6 | 2470 |  | 2627 FS | True | 2647 FS | 604800 | + 2d |
| 2021-03-30T10:00:00.0 | ed | Level 31 | 1.1.16.5.2.30 | AS_SOON_AS_POSSIBLE | 604800 | 500 | 302400 | 302400 | 2021-03-30T10:00:00.0 | 2021-04-07T18:00:00.0 | 2021-04-26T09:00:00.0 | 2021-05-05T17:00:00.0 | 2627 |  | 2018-03-19T18:56:00.0 | 1.1.16.5.2.30 |  | PRORATED | True | True | 604800 | 20ef78d1-fd4c-ec11-bf9c-a4c3f0a9aeba | True | 2021-04-07T18:00:00.0 | 134 |  | 6 | 2470 |  | 2628 FS | True | 2626 FS | 604800 |  |
| 2021-04-07T18:00:00.0 | ed | Level 32 | 1.1.16.5.2.31 | AS_SOON_AS_POSSIBLE | 604800 | 500 | 345600 | 345600 | 2021-04-07T18:00:00.0 | 2021-04-17T15:00:00.0 | 2021-05-05T17:00:00.0 | 2021-05-15T14:00:00.0 | 2628 |  | 2018-03-19T18:56:00.0 | 1.1.16.5.2.31 |  | PRORATED | True | True | 604800 | 21ef78d1-fd4c-ec11-bf9c-a4c3f0a9aeba | True | 2021-04-17T15:00:00.0 | 135 |  | 6 | 2470 |  | 2629 FS | True | 2627 FS | 604800 |  |
| 2021-04-17T15:00:00.0 | ed | Level 33 | 1.1.16.5.2.32 | AS_SOON_AS_POSSIBLE | 604800 | 500 | 302400 | 302400 | 2021-04-17T15:00:00.0 | 2021-04-27T10:00:00.0 | 2021-05-15T14:00:00.0 | 2021-05-26T09:00:00.0 | 2629 |  | 2018-03-19T18:56:00.0 | 1.1.16.5.2.32 |  | PRORATED | True | True | 604800 | 22ef78d1-fd4c-ec11-bf9c-a4c3f0a9aeba | True | 2021-04-27T10:00:00.0 | 136 |  | 6 | 2470 |  | 2630 FS | True | 2628 FS | 604800 |  |
| 2021-04-27T10:00:00.0 | ed | Level 34 | 1.1.16.5.2.33 | AS_SOON_AS_POSSIBLE | 604800 | 500 | 345600 | 345600 | 2021-04-27T10:00:00.0 | 2021-05-07T19:00:00.0 | 2021-05-26T09:00:00.0 | 2021-06-04T18:00:00.0 | 2630 |  | 2018-03-19T18:56:00.0 | 1.1.16.5.2.33 |  | PRORATED | True | True | 604800 | 23ef78d1-fd4c-ec11-bf9c-a4c3f0a9aeba | True | 2021-05-07T19:00:00.0 | 137 |  | 6 | 2470 |  | 2631 FS | True | 2629 FS | 604800 |  |
| 2021-05-08T07:00:00.0 | ed | Level 35 | 1.1.16.5.2.34 | AS_SOON_AS_POSSIBLE | 604800 | 500 | 302400 | 302400 | 2021-05-08T07:00:00.0 | 2021-05-17T15:00:00.0 | 2021-06-04T18:00:00.0 | 2021-06-14T14:00:00.0 | 2631 |  | 2018-03-19T18:56:00.0 | 1.1.16.5.2.34 |  | PRORATED | True | True | 604800 | 24ef78d1-fd4c-ec11-bf9c-a4c3f0a9aeba | True | 2021-05-17T15:00:00.0 | 138 |  | 6 | 2470 |  | 2585 FS | True | 2630 FS | 604800 |  |
| 2021-05-17T15:00:00.0 | ed | Level 36 | 1.1.16.5.2.35 | AS_SOON_AS_POSSIBLE | 604800 | 500 | 345600 | 345600 | 2021-05-17T15:00:00.0 | 2021-05-28T11:00:00.0 | 2021-06-14T14:00:00.0 | 2021-06-24T10:00:00.0 | 2585 |  | 2018-03-15T16:46:00.0 | 1.1.16.5.2.35 |  | PRORATED | True | True | 604800 | 00ef78d1-fd4c-ec11-bf9c-a4c3f0a9aeba | True | 2021-05-28T11:00:00.0 | 139 |  | 6 | 2470 |  | 2132 FS | True | 2243 FF, 2631 FS | 604800 | + 6d |

| start | leveling_delay_units | name | wbs | constraint_type | total_slack | priority | duration | remaining_duration | early_start | early_finish | late_start | late_finish | unique_id | summary | created | outline_number | type | fixed_cost_accrual | leveling_can_split | level_assignments | start_slack | guid | active | finish | id | rollup | outline_level | parent_task_unique_id | critical | milestone | successors | effort_driven | predecessors | finish_slack | free_slack | text1 |
| --- | --- | --- | --- | --- | --- | --- | --- | --- | --- | --- | --- | --- | --- | --- | --- | --- | --- | --- | --- | --- | --- | --- | --- | --- | --- | --- | --- | --- | --- | --- | --- | --- | --- | --- | --- | --- |
| 2021-05-28T11:00:00.0 | ed | Lower Roof | 1.1.16.5.2.36 | AS_SOON_AS_POSSIBLE | 604800 | 500 | 648000 | 648000 | 2021-05-28T11:00:00.0 | 2021-06-16T16:00:00.0 | 2021-06-24T10:00:00.0 | 2021-07-14T15:00:00.0 | 2132 |  | 2016-08-04T11:46:00.0 | 1.1.16.5.2.36 |  | PRORATED | True | True | 604800 | c1ee78d1-fd4c-ec11-bf9c-a4c3f0a9aeba | True | 2021-06-16T16:00:00.0 | 140 |  | 6 | 2470 |  |  | 2133 FS | True | 2585 FS, 2479 FS | 604800 |  |  |
| 2021-06-16T16:00:00.0 | ed | Upper Roof | 1.1.16.5.2.37 | AS_SOON_AS_POSSIBLE | 604800 | 500 | 432000 | 432000 | 2021-06-16T16:00:00.0 | 2021-06-29T15:00:00.0 | 2021-07-14T15:00:00.0 | 2021-07-27T14:00:00.0 | 2133 |  | 2016-08-04T11:46:00.0 | 1.1.16.5.2.37 |  | PRORATED | True | True | 604800 | c2ee78d1-fd4c-ec11-bf9c-a4c3f0a9aeba | True | 2021-06-29T15:00:00.0 | 141 |  | 6 | 2470 |  |  | 2290 FS, 2297 5011200 FF | True | 2132 FS | 604800 |  |  |
| 2020-05-15T09:00:00.0 | ed | Service Apartment | 1.1.16.6 | AS_SOON_AS_POSSIBLE | 1958400 | 500 | 6134400 | 6134400 | 2020-05-15T09:00:00.0 | 2020-11-17T08:00:00.0 | 2020-08-12T11:00:00.0 | 2021-02-15T10:00:00.0 | 2663 | True | 2018-06-12T00:09:00.0 | 1.1.16.6 | FIXED_DURATION | PRORATED | True | True | 1958400 | 3def78d1-fd4c-ec11-bf9c-a4c3f0a9aeba | True | 2020-11-17T08:00:00.0 | 142 | True | 4 | 2483 |  |  |  |  |  | 1958400 | 1958400 |  |
| 2020-05-15T09:00:00.0 | ed | Level 1 | 1.1.16.6.1 | AS_SOON_AS_POSSIBLE | 1958400 | 500 | 1512000 | 1512000 | 2020-05-15T09:00:00.0 | 2020-06-30T11:00:00.0 | 2020-08-12T11:00:00.0 | 2020-09-26T14:00:00.0 | 2667 |  | 2018-06-12T00:09:00.0 | 1.1.16.6.1 |  | PRORATED | True | True | 1958400 | 41ef78d1-fd4c-ec11-bf9c-a4c3f0a9aeba | True | 2020-06-30T11:00:00.0 | 143 |  | 5 | 2663 |  |  | 2666 FS | True | 2278 FS | 1958400 |  | 40m2/d |
| 2020-06-30T11:00:00.0 | ed | Level 2 | 1.1.16.6.2 | AS_SOON_AS_POSSIBLE | 1958400 | 500 | 1296000 | 1296000 | 2020-06-30T11:00:00.0 | 2020-08-08T08:00:00.0 | 2020-09-26T14:00:00.0 | 2020-11-05T10:00:00.0 | 2666 |  | 2018-06-12T00:09:00.0 | 1.1.16.6.2 |  | PRORATED | True | True | 1958400 | 40ef78d1-fd4c-ec11-bf9c-a4c3f0a9aeba | True | 2020-08-08T08:00:00.0 | 144 |  | 5 | 2663 |  |  | 2665 FS | True | 2667 FS | 1958400 |  |  |
| 2020-08-08T08:00:00.0 | ed | Level 3 | 1.1.16.6.3 | AS_SOON_AS_POSSIBLE | 1958400 | 500 | 691200 | 691200 | 2020-08-08T08:00:00.0 | 2020-08-28T14:00:00.0 | 2020-11-05T10:00:00.0 | 2020-11-25T16:00:00.0 | 2665 |  | 2018-06-12T00:09:00.0 | 1.1.16.6.3 |  | PRORATED | True | True | 1958400 | 3fef78d1-fd4c-ec11-bf9c-a4c3f0a9aeba | True | 2020-08-28T14:00:00.0 | 145 |  | 5 | 2663 |  |  | 2664 FS | True | 2666 FS | 1958400 |  |  |
| 2020-08-28T14:00:00.0 | ed | Level 4 | 1.1.16.6.4 | AS_SOON_AS_POSSIBLE | 1958400 | 500 | 691200 | 691200 | 2020-08-28T14:00:00.0 | 2020-09-18T19:00:00.0 | 2020-11-25T16:00:00.0 | 2020-12-16T09:00:00.0 | 2664 |  | 2018-06-12T00:09:00.0 | 1.1.16.6.4 |  | PRORATED | True | True | 1958400 | 3eef78d1-fd4c-ec11-bf9c-a4c3f0a9aeba | True | 2020-09-18T19:00:00.0 | 146 |  | 5 | 2663 |  |  | 2662 FS | True | 2665 FS | 1958400 |  |  |
| 2020-09-19T07:00:00.0 | ed | Attic | 1.1.16.6.5 | AS_SOON_AS_POSSIBLE | 1353600 | 500 | 1080000 | 1080000 | 2020-09-19T07:00:00.0 | 2020-10-21T10:00:00.0 | 2020-11-19T10:00:00.0 | 2020-12-21T14:00:00.0 | 2662 |  | 2018-06-12T00:09:00.0 | 1.1.16.6.5 |  | PRORATED | True | True | 1353600 | 3cef78d1-fd4c-ec11-bf9c-a4c3f0a9aeba | True | 2020-10-21T10:00:00.0 | 147 |  | 5 | 2663 |  |  | 2668 FS | True | 2664 FS | 1353600 |  |  |
| 2020-10-21T10:00:00.0 | ed | Roof | 1.1.16.6.6 | AS_SOON_AS_POSSIBLE | 1958400 | 500 | 864000 | 864000 | 2020-10-21T10:00:00.0 | 2020-11-17T08:00:00.0 | 2021-01-19T13:00:00.0 | 2021-02-15T10:00:00.0 | 2668 |  | 2018-06-12T00:10:00.0 | 1.1.16.6.6 |  | PRORATED | True | True | 1958400 | 42ef78d1-fd4c-ec11-bf9c-a4c3f0a9aeba | True | 2020-11-17T08:00:00.0 | 148 |  | 5 | 2663 |  |  | 2673 FS | True | 2662 FS | 1958400 |  |  |
| 2020-01-21T09:00:00.0 | ed | PPPVC CONSTRUCTION | 1.1.16.7 | AS_SOON_AS_POSSIBLE | 662400 | 500 | 16156800 | 16156800 | 2020-01-21T09:00:00.0 | 2021-05-26T09:00:00.0 | 2020-03-26T17:00:00.0 | 2021-06-24T10:00:00.0 | 2476 | True | 2017-10-30T17:50:00.0 | 1.1.16.7 | FIXED_DURATION | PRORATED | True | True | 1468800 | e8ee78d1-fd4c-ec11-bf9c-a4c3f0a9aeba | True | 2021-05-26T09:00:00.0 | 149 | True | 4 | 2483 |  |  |  |  |  | 662400 | 662400 |  |
| 2020-01-21T09:00:00.0 | ed | Carcass Casting | 1.1.16.7.1 | AS_SOON_AS_POSSIBLE | 288000 | 500 | 14472000 | 14472000 | 2020-01-21T09:00:00.0 | 2021-04-03T15:00:00.0 | 2020-02-03T08:00:00.0 | 2021-04-16T14:00:00.0 | 2241 |  | 2017-07-07T17:14:00.0 | 1.1.16.7.1 |  | PRORATED | True | True | 288000 | c3ee78d1-fd4c-ec11-bf9c-a4c3f0a9aeba | True | 2021-04-03T15:00:00.0 | 150 |  | 5 | 2476 |  |  | 2242 1036800 SS | True | 2048 2592000 FS | 288000 |  |  |
| 2020-02-21T11:00:00.0 | ed | Fit-Out Works | 1.1.16.7.2 | AS_SOON_AS_POSSIBLE | 1468800 | 500 | 13824000 | 13824000 | 2020-02-21T11:00:00.0 | 2021-04-15T12:00:00.0 | 2020-04-28T07:00:00.0 | 2021-06-22T08:00:00.0 | 2242 |  | 2017-07-07T17:14:00.0 | 1.1.16.7.2 |  | PRORATED | True | True | 1468800 | c4ee78d1-fd4c-ec11-bf9c-a4c3f0a9aeba | True | 2021-04-15T12:00:00.0 | 151 |  | 5 | 2476 |  |  | 2243 1036800 SS | True | 2241 1036800 SS | 1468800 | 806400 |  |
| 2020-04-29T08:00:00.0 | ed | PPVC Installation | 1.1.16.7.3 | AS_SOON_AS_POSSIBLE | 57600 | 500 | 12873600 | 12873600 | 2020-04-29T08:00:00.0 | 2021-05-26T09:00:00.0 | 2020-05-02T10:00:00.0 | 2021-05-28T11:00:00.0 | 2243 |  | 2017-07-07T17:14:00.0 | 1.1.16.7.3 |  | PRORATED | True | True | 57600 | c5ee78d1-fd4c-ec11-bf9c-a4c3f0a9aeba | True | 2021-05-26T09:00:00.0 | 152 |  | 5 | 2476 |  |  | 2585 FF | True | 2242 1036800 SS, 1427 SS | 57600 | 57600 |  |
| 2020-05-23T16:00:00.0 | ed | Architectural + M&E WORKS: | 1.1.16.8 | AS_SOON_AS_POSSIBLE | 921600 | 500 | 19180800 | 19180800 | 2020-05-23T16:00:00.0 | 2021-12-24T08:00:00.0 | 2020-08-21T07:00:00.0 | 2022-02-04T19:00:00.0 | 2398 | True | 2017-10-27T16:24:00.0 | 1.1.16.8 | FIXED_DURATION | PRORATED | True | True | 1987200 | e0ee78d1-fd4c-ec11-bf9c-a4c3f0a9aeba | True | 2021-12-24T08:00:00.0 | 153 | True | 4 | 2483 |  |  | 1068 518400 FF, 2561 777600 FF, 1069 518400 FF |  |  | 921600 |  |  |
| 2020-07-14T10:00:00.0 | ed | Blk 1 - Architectural + M&E Works | 1.1.16.8.1 | AS_SOON_AS_POSSIBLE | 1612800 | 500 | 16459200 | 16459200 | 2020-07-14T10:00:00.0 | 2021-11-23T18:00:00.0 | 2020-09-24T11:00:00.0 | 2022-02-04T19:00:00.0 | 2399 | True | 2017-10-27T16:25:00.0 | 1.1.16.8.1 | FIXED_DURATION | PRORATED | True | True | 1612800 | e1ee78d1-fd4c-ec11-bf9c-a4c3f0a9aeba | True | 2021-11-23T18:00:00.0 | 154 | True | 5 | 2398 |  |  |  |  |  | 1612800 | 1612800 |  |
| 2020-07-14T10:00:00.0 | ed | Structural Clearance | 1.1.16.8.1.1 | AS_SOON_AS_POSSIBLE | 1612800 | 500 | 12528000 | 12528000 | 2020-07-14T10:00:00.0 | 2021-07-28T15:00:00.0 | 2020-09-24T11:00:00.0 | 2021-10-08T16:00:00.0 | 1935 |  | 2017-07-04T17:39:00.0 | 1.1.16.8.1.1 |  | PRORATED | True | True | 1612800 | afee78d1-fd4c-ec11-bf9c-a4c3f0a9aeba | True | 2021-07-28T15:00:00.0 | 155 |  | 6 | 2399 |  |  | 1937 1036800 SS | True | 1429 FS | 1612800 |  |  |
| 2020-08-13T13:00:00.0 | ed | Wet Trades + M&E 2nd Fix | 1.1.16.8.1.2 | AS_SOON_AS_POSSIBLE | 1094400 | 500 | 14688000 | 14688000 | 2020-08-13T13:00:00.0 | 2021-11-02T11:00:00.0 | 2020-10-01T18:00:00.0 | 2021-12-20T17:00:00.0 | 1937 |  | 2017-07-04T17:40:00.0 | 1.1.16.8.1.2 |  | PRORATED | True | True | 1094400 | b0ee78d1-fd4c-ec11-bf9c-a4c3f0a9aeba | True | 2021-11-02T11:00:00.0 | 156 |  | 6 | 2399 |  |  | 1938 1036800 SS | True | 1935 1036800 SS | 1094400 |  | 8d/cycle + 50d |
| 2020-09-14T15:00:00.0 | ed | Dry Trades + M&E Final Fix | 1.1.16.8.1.3 | AS_SOON_AS_POSSIBLE | 1612800 | 500 | 14385600 | 14385600 | 2020-09-14T15:00:00.0 | 2021-11-23T18:00:00.0 | 2020-11-25T16:00:00.0 | 2022-02-04T19:00:00.0 | 1938 |  | 2017-07-04T17:40:00.0 | 1.1.16.8.1.3 |  | PRORATED | True | True | 1612800 | b1ee78d1-fd4c-ec11-bf9c-a4c3f0a9aeba | True | 2021-11-23T18:00:00.0 | 157 |  | 6 | 2399 |  |  |  | True | 1937 1036800 SS | 1612800 | 1612800 |  |
| 2020-08-21T07:00:00.0 | ed | Blk 2 - Architectural + M&E Works | 1.1.16.8.2 | AS_SOON_AS_POSSIBLE |  | 500 | 16200000 | 16200000 | 2020-08-21T07:00:00.0 | 2021-12-24T08:00:00.0 | 2020-08-21T07:00:00.0 | 2021-12-24T08:00:00.0 | 2295 | True | 2017-10-12T18:44:00.0 | 1.1.16.8.2 | FIXED_DURATION | PRORATED | True | True |  | d4ee78d1-fd4c-ec11-bf9c-a4c3f0a9aeba | True | 2021-12-24T08:00:00.0 | 158 | True | 5 | 2398 | True |  |  |  |  |  |  |  |
| 2020-08-21T07:00:00.0 | ed | Structural Clearance | 1.1.16.8.2.1 | AS_SOON_AS_POSSIBLE |  | 500 | 12528000 | 12528000 | 2020-08-21T07:00:00.0 | 2021-09-06T11:00:00.0 | 2020-08-21T07:00:00.0 | 2021-09-06T11:00:00.0 | 2298 |  | 2017-10-12T18:46:00.0 | 1.1.16.8.2.1 |  | PRORATED | True | True |  | d7ee78d1-fd4c-ec11-bf9c-a4c3f0a9aeba | True | 2021-09-06T11:00:00.0 | 159 |  | 6 | 2295 | True |  | 2296 777600 SS | True | 2624 518400 FS |  |  |  |
| 2020-09-14T15:00:00.0 | ed | Wet Trades + M&E 2nd Fix | 1.1.16.8.2.2 | AS_SOON_AS_POSSIBLE |  | 500 | 14688000 | 14688000 | 2020-09-14T15:00:00.0 | 2021-12-02T14:00:00.0 | 2020-09-14T15:00:00.0 | 2021-12-02T14:00:00.0 | 2296 |  | 2017-10-12T18:45:00.0 | 1.1.16.8.2.2 |  | PRORATED | True | True |  | d5ee78d1-fd4c-ec11-bf9c-a4c3f0a9aeba | True | 2021-12-02T14:00:00.0 | 160 |  | 6 | 2295 | True |  | 2297 1036800 SS | True | 2298 777600 SS |  |  | 8d/cycle + 50d |
| 2020-10-14T17:00:00.0 | ed | Dry Trades + M&E Final Fix | 1.1.16.8.2.3 | AS_SOON_AS_POSSIBLE |  | 500 | 14385600 | 14385600 | 2020-10-14T17:00:00.0 | 2021-12-24T08:00:00.0 | 2020-10-14T17:00:00.0 | 2021-12-24T08:00:00.0 | 2297 |  | 2017-10-12T18:46:00.0 | 1.1.16.8.2.3 |  | PRORATED | True | True |  | d6ee78d1-fd4c-ec11-bf9c-a4c3f0a9aeba | True | 2021-12-24T08:00:00.0 | 161 |  | 6 | 2295 | True |  | 2558 -518400 FS | True | 2296 1036800 SS, 2133 5011200 FF |  |  |  |
| 2020-11-17T08:00:00.0 | ed | Service Apartment- Architectural + M&E Works | 1.1.16.8.3 | AS_SOON_AS_POSSIBLE | 1958400 | 500 | 11750400 | 11750400 | 2020-11-17T08:00:00.0 | 2021-11-08T17:00:00.0 | 2021-02-15T10:00:00.0 | 2022-02-04T19:00:00.0 | 2672 | True | 2017-10-12T18:44:00.0 | 1.1.16.8.3 | FIXED_DURATION | PRORATED | True | True | 1958400 | 43ef78d1-fd4c-ec11-bf9c-a4c3f0a9aeba | True | 2021-11-08T17:00:00.0 | 162 | True | 5 | 2398 |  |  |  |  |  | 1958400 | 1958400 |  |
| 2020-11-17T08:00:00.0 | ed | Structural Clearance | 1.1.16.8.3.1 | AS_SOON_AS_POSSIBLE | 1958400 | 500 | 5184000 | 5184000 | 2020-11-17T08:00:00.0 | 2021-04-22T19:00:00.0 | 2021-02-15T10:00:00.0 | 2021-07-22T09:00:00.0 | 2673 |  | 2017-10-12T18:46:00.0 | 1.1.16.8.3.1 |  | PRORATED | True | True | 1958400 | 44ef78d1-fd4c-ec11-bf9c-a4c3f0a9aeba | True | 2021-04-22T19:00:00.0 | 163 |  | 6 | 2672 |  |  | 2674 1555200 SS | True | 2668 FS | 1958400 |  |  |
| 2021-01-04T11:00:00.0 | ed | Wet Trades + M&E 2nd Fix | 1.1.16.8.3.2 | AS_SOON_AS_POSSIBLE | 1958400 | 500 | 7776000 | 7776000 | 2021-01-04T11:00:00.0 | 2021-08-27T16:00:00.0 | 2021-04-02T14:00:00.0 | 2021-11-23T18:00:00.0 | 2674 |  | 2017-10-12T18:45:00.0 | 1.1.16.8.3.2 |  | PRORATED | True | True | 1958400 | 45ef78d1-fd4c-ec11-bf9c-a4c3f0a9aeba | True | 2021-08-27T16:00:00.0 | 164 |  | 6 | 2672 |  |  | 2675 1555200 SS | True | 2673 1555200 SS | 1958400 |  |  |
| 2021-02-19T15:00:00.0 | ed | Dry Trades + M&E Final Fix | 1.1.16.8.3.3 | AS_SOON_AS_POSSIBLE | 1958400 | 500 | 8640000 | 8640000 | 2021-02-19T15:00:00.0 | 2021-11-08T17:00:00.0 | 2021-05-19T17:00:00.0 | 2022-02-04T19:00:00.0 | 2675 |  | 2017-10-12T18:46:00.0 | 1.1.16.8.3.3 |  | PRORATED | True | True | 1958400 | 46ef78d1-fd4c-ec11-bf9c-a4c3f0a9aeba | True | 2021-11-08T17:00:00.0 | 165 |  | 6 | 2672 |  |  |  | True | 2674 1555200 SS | 1958400 | 1958400 |  |
| 2020-05-23T16:00:00.0 | ed | Podium & Carpark - Architectural + M&E Works | 1.1.16.8.4 | AS_SOON_AS_POSSIBLE | 4147200 | 500 | 14342400 | 14342400 | 2020-05-23T16:00:00.0 | 2021-07-31T18:00:00.0 | 2020-11-26T17:00:00.0 | 2022-02-04T19:00:00.0 | 2588 | True | 2017-10-12T18:44:00.0 | 1.1.16.8.4 | FIXED_DURATION | PRORATED | True | True | 4147200 | 02ef78d1-fd4c-ec11-bf9c-a4c3f0a9aeba | True | 2021-07-31T18:00:00.0 | 166 | True | 5 | 2398 |  |  |  |  |  | 4147200 | 4147200 |  |
| 2020-05-23T16:00:00.0 | ed | Structural Clearance | 1.1.16.8.4.1 | AS_SOON_AS_POSSIBLE | 4147200 | 500 | 7776000 | 7776000 | 2020-05-23T16:00:00.0 | 2021-01-14T08:00:00.0 | 2020-11-26T17:00:00.0 | 2021-07-22T09:00:00.0 | 2589 |  | 2017-10-12T18:46:00.0 | 1.1.16.8.4.1 |  | PRORATED | True | True | 4147200 | 03ef78d1-fd4c-ec11-bf9c-a4c3f0a9aeba | True | 2021-01-14T08:00:00.0 | 167 |  | 6 | 2588 |  |  | 2590 1555200 SS | True | 2328 FS | 4147200 |  |  |
| 2020-07-10T07:00:00.0 | ed | Wet Trades + M&E 2nd Fix | 1.1.16.8.4.2 | AS_SOON_AS_POSSIBLE | 3542400 | 500 | 11232000 | 11232000 | 2020-07-10T07:00:00.0 | 2021-06-15T15:00:00.0 | 2020-12-16T09:00:00.0 | 2021-11-22T17:00:00.0 | 2590 |  | 2017-10-12T18:45:00.0 | 1.1.16.8.4.2 |  | PRORATED | True | True | 3542400 | 04ef78d1-fd4c-ec11-bf9c-a4c3f0a9aeba | True | 2021-06-15T15:00:00.0 | 168 |  | 6 | 2588 |  |  | 2591 1555200 SS | True | 2589 1555200 SS | 3542400 |  |  |
| 2020-08-25T10:00:00.0 | ed | Dry Trades + M&E Final Fix | 1.1.16.8.4.3 | AS_SOON_AS_POSSIBLE | 4147200 | 500 | 11232000 | 11232000 | 2020-08-25T10:00:00.0 | 2021-07-31T18:00:00.0 | 2021-03-02T11:00:00.0 | 2022-02-04T19:00:00.0 | 2591 |  | 2017-10-12T18:46:00.0 | 1.1.16.8.4.3 |  | PRORATED | True | True | 4147200 | 05ef78d1-fd4c-ec11-bf9c-a4c3f0a9aeba | True | 2021-07-31T18:00:00.0 | 169 |  | 6 | 2588 |  |  |  | True | 2590 1555200 SS | 4147200 | 4147200 |  |
| 2020-05-15T09:00:00.0 | ed | External Works+Landscape+Ancillary Building | 1.1.16.9 | AS_SOON_AS_POSSIBLE | 4723200 | 500 | 14515200 | 14515200 | 2020-05-15T09:00:00.0 | 2021-07-29T16:00:00.0 | 2020-12-15T08:00:00.0 | 2022-03-01T15:00:00.0 | 946 | True | 2015-07-14T14:09:00.0 | 1.1.16.9 | FIXED_DURATION | PRORATED | True | True | 4723200 | 91ee78d1-fd4c-ec11-bf9c-a4c3f0a9aeba | True | 2021-07-29T16:00:00.0 | 170 | True | 4 | 2483 |  |  |  |  |  | 4723200 | 4723200 |  |
| 2020-11-26T17:00:00.0 | ed | Substation | 1.1.16.9.1 | AS_SOON_AS_POSSIBLE | 6480000 | 500 | 5400000 | 5400000 | 2020-11-26T17:00:00.0 | 2021-05-11T09:00:00.0 | 2021-09-18T10:00:00.0 | 2022-03-01T15:00:00.0 | 2299 |  | 2017-10-12T18:49:00.0 | 1.1.16.9.1 |  | PRORATED | True | True | 6480000 | d8ee78d1-fd4c-ec11-bf9c-a4c3f0a9aeba | True | 2021-05-11T09:00:00.0 | 171 |  | 5 | 946 |  |  |  | True | 2284 FF, 2586 2073600 SS | 6480000 | 6480000 |  |
| 2020-06-06T16:00:00.0 | ed | External Works + Landscape | 1.1.16.9.2 | AS_SOON_AS_POSSIBLE | 8294400 | 500 | 7776000 | 7776000 | 2020-06-06T16:00:00.0 | 2021-01-28T08:00:00.0 | 2021-06-18T18:00:00.0 | 2022-02-10T10:00:00.0 | 1580 |  | 2016-08-04T14:40:00.0 | 1.1.16.9.2 |  | PRORATED | True | True | 8294400 | a7ee78d1-fd4c-ec11-bf9c-a4c3f0a9aeba | True | 2021-01-28T08:00:00.0 | 172 |  | 5 | 946 |  |  | 1911 3240000 SS | True | 2586 1036800 FS, 2328 FS | 8294400 |  |  |
| 2020-09-11T14:00:00.0 | ed | Softscape | 1.1.16.9.3 | AS_SOON_AS_POSSIBLE | 8294400 | 500 | 5184000 | 5184000 | 2020-09-11T14:00:00.0 | 2021-02-17T12:00:00.0 | 2021-09-24T16:00:00.0 | 2022-03-01T15:00:00.0 | 1911 |  | 2017-07-04T14:16:00.0 | 1.1.16.9.3 |  | PRORATED | True | True | 8294400 | aeee78d1-fd4c-ec11-bf9c-a4c3f0a9aeba | True | 2021-02-17T12:00:00.0 | 173 |  | 5 | 946 |  |  | 286 FS | True | 1580 3240000 SS | 8294400 | 8294400 |  |
| 2020-05-15T09:00:00.0 | ed | Conservation Building | 1.1.16.9.4 | AS_SOON_AS_POSSIBLE | 4723200 | 500 | 14515200 | 14515200 | 2020-05-15T09:00:00.0 | 2021-07-29T16:00:00.0 | 2020-12-15T08:00:00.0 | 2022-03-01T15:00:00.0 | 2659 | True | 2018-06-12T00:02:00.0 | 1.1.16.9.4 | FIXED_DURATION | PRORATED | True | True | 4723200 | 39ef78d1-fd4c-ec11-bf9c-a4c3f0a9aeba | True | 2021-07-29T16:00:00.0 | 174 | True | 5 | 946 |  |  |  |  |  | 4723200 | 4723200 |  |
| 2020-05-15T09:00:00.0 | ed | Structure Strengthening | 1.1.16.9.4.1 | AS_SOON_AS_POSSIBLE | 4723200 | 500 | 4147200 | 4147200 | 2020-05-15T09:00:00.0 | 2020-09-17T18:00:00.0 | 2020-12-15T08:00:00.0 | 2021-04-20T17:00:00.0 | 2661 |  | 2018-06-12T00:02:00.0 | 1.1.16.9.4.1 |  | PRORATED | True | True | 4723200 | 3bef78d1-fd4c-ec11-bf9c-a4c3f0a9aeba | True | 2020-09-17T18:00:00.0 | 175 |  | 6 | 2659 |  |  | 2660 FS | True | 2278 FS | 4723200 |  |  |
| 2020-09-17T18:00:00.0 | ed | Demolition Works | 1.1.16.9.4.2 | AS_SOON_AS_POSSIBLE | 4723200 | 500 | 2073600 | 2073600 | 2020-09-17T18:00:00.0 | 2020-11-19T10:00:00.0 | 2021-04-20T17:00:00.0 | 2021-06-23T09:00:00.0 | 2660 |  | 2018-06-12T00:02:00.0 | 1.1.16.9.4.2 |  | PRORATED | True | True | 4723200 | 3aef78d1-fd4c-ec11-bf9c-a4c3f0a9aeba | True | 2020-11-19T10:00:00.0 | 176 |  | 6 | 2659 |  |  | 2658 FS | True | 2661 FS | 4723200 |  |  |
| 2020-11-19T10:00:00.0 | ed | Structural Works | 1.1.16.9.4.3 | AS_SOON_AS_POSSIBLE | 4723200 | 500 | 3110400 | 3110400 | 2020-11-19T10:00:00.0 | 2021-02-22T17:00:00.0 | 2021-06-23T09:00:00.0 | 2021-09-24T16:00:00.0 | 2658 |  | 2018-06-12T00:02:00.0 | 1.1.16.9.4.3 |  | PRORATED | True | True | 4723200 | 38ef78d1-fd4c-ec11-bf9c-a4c3f0a9aeba | True | 2021-02-22T17:00:00.0 | 177 |  | 6 | 2659 |  |  | 2657 FS | True | 2660 FS | 4723200 |  |  |
| 2021-02-22T17:00:00.0 | ed | Architectural + M&E WORKS: | 1.1.16.9.4.4 | AS_SOON_AS_POSSIBLE | 4723200 | 500 | 5184000 | 5184000 | 2021-02-22T17:00:00.0 | 2021-07-29T16:00:00.0 | 2021-09-24T16:00:00.0 | 2022-03-01T15:00:00.0 | 2657 |  | 2018-06-12T00:01:00.0 | 1.1.16.9.4.4 |  | PRORATED | True | True | 4723200 | 37ef78d1-fd4c-ec11-bf9c-a4c3f0a9aeba | True | 2021-07-29T16:00:00.0 | 178 |  | 6 | 2659 |  |  |  | True | 2658 FS | 4723200 | 4723200 |  |
| 2021-04-10T08:00:00.0 | ed | INSPECTION & HANDOVER | 1.1.17 | AS_SOON_AS_POSSIBLE | 1094400 | 500 | 10713600 | 10713600 | 2021-04-10T08:00:00.0 | 2022-03-01T15:00:00.0 | 2021-05-31T14:00:00.0 | 2022-03-01T15:00:00.0 | 2482 | True | 2017-10-30T21:06:00.0 | 1.1.17 | FIXED_DURATION | PRORATED | True | True | 1094400 | ebee78d1-fd4c-ec11-bf9c-a4c3f0a9aeba | True | 2022-03-01T15:00:00.0 | 179 | True | 3 | 2474 |  |  |  |  |  |  |  |  |
| 2021-04-10T08:00:00.0 | ed | CONQUAS | 1.1.17.1 | AS_SOON_AS_POSSIBLE | 1094400 | 500 | 9072000 | 9072000 | 2021-04-10T08:00:00.0 | 2022-01-11T09:00:00.0 | 2021-05-31T14:00:00.0 | 2022-03-01T15:00:00.0 | 1068 |  | 2016-05-18T15:13:00.0 | 1.1.17.1 |  | PRORATED | True | True | 1094400 | 98ee78d1-fd4c-ec11-bf9c-a4c3f0a9aeba | True | 2022-01-11T09:00:00.0 | 180 |  | 4 | 2482 |  |  |  | True | 2398 518400 FF | 1094400 | 1094400 |  |
| 2021-06-15T15:00:00.0 | ed | QM | 1.1.17.2 | AS_SOON_AS_POSSIBLE | 518400 | 500 | 7776000 | 7776000 | 2021-06-15T15:00:00.0 | 2022-02-04T19:00:00.0 | 2021-07-09T10:00:00.0 | 2022-03-01T15:00:00.0 | 2561 |  | 2018-03-12T11:07:00.0 | 1.1.17.2 |  | PRORATED | True | True | 518400 | f1ee78d1-fd4c-ec11-bf9c-a4c3f0a9aeba | True | 2022-02-04T19:00:00.0 | 181 |  | 4 | 2482 |  |  |  | True | 368 -777600 FF, 2398 777600 FF | 518400 | 518400 |  |
| 2021-06-07T07:00:00.0 | ed | Staircase Storey Shelter Inspection | 1.1.17.3 | AS_SOON_AS_POSSIBLE | 921600 | 500 | 3888000 | 3888000 | 2021-06-07T07:00:00.0 | 2021-10-01T09:00:00.0 | 2021-07-17T18:00:00.0 | 2021-11-12T08:00:00.0 | 2649 |  | 2018-03-19T19:39:00.0 | 1.1.17.3 |  | PRORATED | True | True | 921600 | 30ef78d1-fd4c-ec11-bf9c-a4c3f0a9aeba | True | 2021-10-01T09:00:00.0 | 182 |  | 4 | 2482 |  |  | 2558 FS | True | 1437 FS | 921600 | 921600 |  |
| 2021-06-28T14:00:00.0 | ed | T&C | 1.1.17.4 | AS_SOON_AS_POSSIBLE | 1094400 | 500 | 6480000 | 6480000 | 2021-06-28T14:00:00.0 | 2022-01-11T09:00:00.0 | 2021-08-18T07:00:00.0 | 2022-03-01T15:00:00.0 | 1069 |  | 2016-05-18T15:13:00.0 | 1.1.17.4 |  | PRORATED | True | True | 1094400 | 99ee78d1-fd4c-ec11-bf9c-a4c3f0a9aeba | True | 2022-01-11T09:00:00.0 | 183 |  | 4 | 2482 |  |  | 368 FS | True | 2398 518400 FF | 1094400 | 1094400 |  |
| 2021-12-09T07:00:00.0 | ed | Pre RI & RI | 1.1.17.5 | AS_SOON_AS_POSSIBLE |  | 500 | 1080000 | 1080000 | 2021-12-09T07:00:00.0 | 2022-01-12T10:00:00.0 | 2021-12-09T07:00:00.0 | 2022-01-12T10:00:00.0 | 2558 |  | 2018-02-19T15:32:00.0 | 1.1.17.5 |  | PRORATED | True | True |  | f0ee78d1-fd4c-ec11-bf9c-a4c3f0a9aeba | True | 2022-01-12T10:00:00.0 | 184 |  | 4 | 2482 | True |  | 2283 SS, 2285 -518400 FF, 2557 FS | True | 2297 -518400 FS, 2649 FS |  |  |  |
| 2022-01-12T10:00:00.0 | ed | TOP Inspection | 1.1.17.6 | AS_SOON_AS_POSSIBLE |  | 500 | 1598400 | 1598400 | 2022-01-12T10:00:00.0 | 2022-03-01T15:00:00.0 | 2022-01-12T10:00:00.0 | 2022-03-01T15:00:00.0 | 2557 |  | 2018-02-19T15:31:00.0 | 1.1.17.6 |  | PRORATED | True | True |  | efee78d1-fd4c-ec11-bf9c-a4c3f0a9aeba | True | 2022-03-01T15:00:00.0 | 185 |  | 4 | 2482 | True |  | 2286 SS, 368 FS | True | 2558 FS |  |  |  |
| 2022-03-01T15:00:00.0 | ed | TOP Obtention | 1.1.17.7 | AS_SOON_AS_POSSIBLE |  | 500 |  |  | 2022-03-01T15:00:00.0 | 2022-03-01T15:00:00.0 | 2022-03-01T15:00:00.0 | 2022-03-01T15:00:00.0 | 368 |  | 2015-07-13T10:22:00.0 | 1.1.17.7 |  | PRORATED | True | True |  | 90ee78d1-fd4c-ec11-bf9c-a4c3f0a9aeba | True | 2022-03-01T15:00:00.0 | 186 |  | 4 | 2482 | True | True | 2561 -777600 FF, 286 FS | True | 2557 FS, 1069 FS |  |  |  |
| 2022-03-01T15:00:00.0 | ed | Completion of Works | 1.1.17.8 | AS_SOON_AS_POSSIBLE |  | 500 |  |  | 2022-03-01T15:00:00.0 | 2022-03-01T15:00:00.0 | 2022-03-01T15:00:00.0 | 2022-03-01T15:00:00.0 | 286 |  | 2015-07-13T10:29:00.0 | 1.1.17.8 |  | PRORATED | True | True |  | 8fee78d1-fd4c-ec11-bf9c-a4c3f0a9aeba | True | 2022-03-01T15:00:00.0 | 187 |  | 4 | 2482 | True | True | 949 FS | True | 368 FS, 1911 FS |  |  |  |
